# 博地影秀城智能化大数据系统进度计划V0.4-20170418-huowl

Schedule from MS Project, 2017-01-09 to 2018-02-02, A marks actual dates.
Microsoft

## Calendars

- 标准: Mon-Fri 08:00-12:00, 13:00-17:00; Sat-Sun off.

## Resources

| Resource |
| --- |
| 全体成员 |
| 徐志峰 |
| 屠文洋 |
| 许志峰 |
| 黄薇 |
| 吕腾飞 |
| 张水江 |
| 陈江 |
| 潘海洋 |
| 屈鹏飞 |
| 霍文列 |
| 谢立英 |
| ? |
| 孙浙君 |
| 陆剑飞 |
| 金青青 |
| 何平 |
| 郑开丽 |
| 王广园 |
| 林朋 |
| 裴靖东 |
| 黄光为 |
| 包刚 |
| 冯泽刚 |
| 俞周宏 |
| 何秀莲 |
| 罗艳清 |
| 王琨 |
| 黄博 |
| 梁庄 |
| 梁壮 |
| 肖宝 |
| 项目组自测 |
| 杨逸群 |
| 杨理东 |

## Schedule

| ID | WBS | Task | Type | Duration | Start | Finish | Complete | Remaining | Actual finish | Total slack | Resources | Work | Actual work | 任务类型 | 工作成果 |
| --- | --- | --- | --- | --- | --- | --- | --- | --- | --- | --- | --- | --- | --- | --- | --- |
| 1 | 1 | **博地影秀城智能化大数据系统进度计划.mpp** |  | 279.88d | 2017-01-09 A | 2018-02-02 | 16% | 235.92d |  | 0d |  | 21326.4h | 5734.81h |  |  |
| 2 | 1.1 | **项目启动** |  | 0.88d | 2017-01-09 A | 2017-01-09 A | 100% |  |  |  |  | 8h | 8h |  |  |
| 3 | 1.1.1 | 项目启动会 | manual | 1d | 2017-01-09 A | 2017-01-09 A | 100% |  |  |  | 全体成员 | 8h | 8h | 项目管理 | 项目启动会材料 |
| 4 | 1.2 | **项目策划** |  | 4.88d | 2017-01-09 A | 2017-01-13 A | 100% |  |  |  |  | 112h | 112h |  |  |
| 5 | 1.2.1 | **计划制定** |  | 2.88d | 2017-01-09 A | 2017-01-11 A | 100% |  |  |  |  | 48h | 48h |  |  |
| 6 | 1.2.1.1 | 制订项目计划 | manual | 3d | 2017-01-09 A | 2017-01-11 A | 100% |  |  |  | 许志峰; 屠文洋 | 48h | 48h | 项目管理 | 进度计划、过程审查表、计划与跟踪表 |
| 7 | 1.2.2 | **计划内审** |  | 1.88d | 2017-01-11 A | 2017-01-12 A | 100% |  |  |  |  | 48h | 48h |  |  |
| 8 | 1.2.2.1 | 项目计划审批 | manual | 1d | 2017-01-11 A | 2017-01-11 A | 100% |  |  |  | 许志峰; 屠文洋 | 16h | 16h | 评审 | 计划与跟踪表 |
| 9 | 1.2.2.2 | 项目计划修订 | manual | 1d | 2017-01-12 A | 2017-01-12 A | 100% |  |  |  | 许志峰; 屠文洋 | 16h | 16h | 返工 | 进度计划 |
| 10 | 1.2.2.3 | 项目计划问题验证 | manual | 1d | 2017-01-12 A | 2017-01-12 A | 100% |  |  |  | 许志峰; 屠文洋 | 16h | 16h | 评审 | 进度计划、计划与跟踪表 |
| 11 | 1.2.3 | 项目估算 | manual | 1d | 2017-01-13 A | 2017-01-13 A | 100% |  |  |  | 许志峰; 屠文洋 | 16h | 16h | 项目管理 | 估算过程表 |
| 12 | 1.3 | **需求分析** |  | 75d | 2017-01-16 A | 2017-04-28 A | 100% |  |  |  | 黄薇; 霍文列; 许志峰 | 4656h | 4656h |  | PRD、UI设计稿、回款20% |
| 13 | 1.3.1 | **需求调研** |  | 62d | 2017-01-16 A | 2017-04-12 A | 100% |  |  |  |  | 976h | 976h |  |  |
| 14 | 1.3.1.1 | 博地相关部门需求调研 | manual | 55d | 2017-01-16 A | 2017-03-31 A | 100% |  |  |  | 许志峰; 黄薇 | 880h | 880h | 需求分析 | 调研文档 |
| 15 | 1.3.1.2 | 待对接系统供应商初步沟通 | manual | 6d | 2017-04-04 A | 2017-04-12 A | 100% |  |  |  | 许志峰; 黄薇 | 96h | 96h | 需求分析 | 调研文档 |
| 16 | 1.3.2 | **功能需求分析** |  | 2d | 2017-04-07 A | 2017-04-10 | 100% |  | 2017-04-18 |  | 黄薇; 霍文列 | 176h | 176h |  | PRD需求规格说明书 |
| 17 | 1.3.2.1 | **智慧商业应用子系统** |  | 7.88d | 2017-04-07 A | 2017-04-18 A | 100% |  |  |  |  | 144h | 144h |  |  |
| 18 | 1.3.2.1.1 | 客户画像 | manual | 2d | 2017-04-07 A | 2017-04-08 A | 100% |  |  |  | 许志峰; 黄薇 | 32h | 32h | 需求分析 | 需求分析说明书 |
| 19 | 1.3.2.1.2 | 业态分析 | manual | 2d | 2017-04-10 A | 2017-04-11 A | 100% |  |  |  | 许志峰; 黄薇 | 32h | 32h | 需求分析 | 需求分析说明书 |
| 20 | 1.3.2.1.3 | 精准营销 | manual | 2d | 2017-04-12 A | 2017-04-13 A | 100% |  |  |  | 许志峰; 黄薇 | 32h | 32h | 需求分析 | 需求分析说明书 |
| 21 | 1.3.2.1.4 | 推广效果评估 | manual | 1d | 2017-04-14 A | 2017-04-15 A | 100% |  |  |  | 许志峰; 黄薇 | 16h | 16h | 需求分析 | 需求分析说明书 |
| 22 | 1.3.2.1.5 | 指标完成度匹配 | manual | 2d | 2017-04-17 A | 2017-04-18 A | 100% |  |  |  | 许志峰; 黄薇 | 32h | 32h | 需求分析 | 需求分析说明书 |
| 23 | 1.3.2.2 | 移动可视化子系统 | manual | 1d | 2017-04-07 A | 2017-04-10 A | 100% |  |  |  |  |  |  | 需求分析 | 需求分析说明书 |
| 24 | 1.3.2.3 | 大屏可视化子系统 | manual | 1d | 2017-04-07 A | 2017-04-10 A | 100% |  |  |  |  |  |  | 需求分析 | 需求分析说明书 |
| 25 | 1.3.2.4 | 数据仓库子系统 | manual | 1d | 2017-04-07 A | 2017-04-10 A | 100% |  |  |  |  |  |  | 需求分析 | 需求分析说明书 |
| 26 | 1.3.2.5 | 门户平台 | manual | 1d | 2017-04-07 A | 2017-04-10 A | 100% |  |  |  |  |  |  | 需求分析 | 需求分析说明书 |

Notes:
- 12: 4月19日完成，剩余时间预留回款日期
- 16: 4月11日提交PRD给客户

| ID | WBS | Task | Type | Duration | Start | Finish | Complete | Actual finish | Resources | Work | Actual work | 工作成果 | 任务类型 |
| --- | --- | --- | --- | --- | --- | --- | --- | --- | --- | --- | --- | --- | --- |
| 27 | 1.3.3 | **界面原型** |  | 37d | 2017-02-20 A | 2017-04-11 | 100% | 2017-04-14 | 黄薇; 霍文列 | 1440h | 1440h | 原型设计稿 |  |
| 28 | 1.3.3.1 | **界面原型设计** |  | 39.88d | 2017-02-20 A | 2017-04-14 A | 100% |  |  | 784h | 784h |  |  |
| 29 | 1.3.3.1.1 | 数据资产管理子系统 | manual | 22d | 2017-02-20 A | 2017-03-22 A | 100% |  | 许志峰; 黄薇 | 352h | 352h | 界面原型 | 需求分析 |
| 30 | 1.3.3.1.2 | 智能分析子系统 | manual | 5d | 2017-04-01 A | 2017-04-07 A | 100% |  | 许志峰; 黄薇 | 80h | 80h | 界面原型 | 需求分析 |
| 31 | 1.3.3.1.3 | 大数据可视化子系统 | manual | 14d | 2017-03-13 A | 2017-03-31 A | 100% |  | 许志峰; 黄薇 | 224h | 224h | 界面原型 | 需求分析 |
| 32 | 1.3.3.1.4 | 智慧商业应用子系统 | manual | 8d | 2017-04-05 A | 2017-04-14 A | 100% |  | 许志峰; 黄薇 | 128h | 128h | 界面原型 | 需求分析 |
| 33 | 1.3.3.1.5 | 移动可视化子系统 | manual | 1d | 2017-02-20 A | 2017-02-21 A | 100% |  |  |  |  | 界面原型 | 需求分析 |
| 34 | 1.3.3.1.6 | 大屏可视化子系统 | manual | 1d | 2017-02-20 A | 2017-02-21 A | 100% |  |  |  |  | 界面原型 | 需求分析 |
| 35 | 1.3.3.1.7 | 数据仓库子系统 | manual | 1d | 2017-02-20 A | 2017-02-21 A | 100% |  |  |  |  | 界面原型 | 需求分析 |
| 36 | 1.3.3.1.8 | 门户平台 | manual | 1d | 2017-02-20 A | 2017-02-21 A | 100% |  |  |  |  | 界面原型 | 需求分析 |
| 37 | 1.3.3.2 | **界面原型确认** |  | 5.88d | 2017-03-31 A | 2017-04-08 A | 100% |  |  | 64h | 64h |  |  |
| 38 | 1.3.3.2.1 | 数据资产管理子系统 | manual | 1d | 2017-03-31 A | 2017-03-31 A | 100% |  | 许志峰; 黄薇 | 16h | 16h | 会议纪要、界面原型 | 评审 |
| 39 | 1.3.3.2.2 | 智能分析子系统 | manual | 1d | 2017-04-08 A | 2017-04-08 A | 100% |  | 许志峰; 黄薇 | 16h | 16h | 会议纪要、界面原型 | 评审 |
| 40 | 1.3.3.2.3 | 大数据可视化子系统 | manual | 1d | 2017-03-31 A | 2017-03-31 A | 100% |  | 许志峰; 黄薇 | 16h | 16h | 会议纪要、界面原型 | 评审 |
| 41 | 1.3.3.2.4 | 智慧商业应用子系统 | manual | 1d | 2017-04-07 A | 2017-04-07 A | 100% |  | 许志峰; 黄薇 | 16h | 16h | 会议纪要、界面原型 | 评审 |
| 42 | 1.3.3.2.5 | 移动可视化子系统 | manual | 1d | 2017-03-31 A | 2017-04-03 A | 100% |  |  |  |  | 会议纪要、界面原型 | 评审 |
| 43 | 1.3.3.2.6 | 大屏可视化子系统 | manual | 1d | 2017-03-31 A | 2017-04-03 A | 100% |  |  |  |  | 会议纪要、界面原型 | 评审 |
| 44 | 1.3.3.2.7 | 数据仓库子系统 | manual | 1d | 2017-03-31 A | 2017-04-03 A | 100% |  |  |  |  | 会议纪要、界面原型 | 评审 |
| 45 | 1.3.3.2.8 | 门户平台 | manual | 1d | 2017-03-31 A | 2017-04-03 A | 100% |  |  |  |  | 会议纪要、界面原型 | 评审 |
| 46 | 1.3.3.3 | 需求规格说明书（总体）编写 | manual | 5d | 2017-04-10 A | 2017-04-14 A | 100% |  |  |  |  | 需求规格说明书 | 需求分析 |
| 47 | 1.3.4 | **需求分析评审** |  | 5.88d | 2017-04-11 A | 2017-04-18 A | 100% |  |  | 72h | 72h |  |  |
| 48 | 1.3.4.1 | 需求分析内审 | manual | 1d | 2017-04-18 A | 2017-04-18 A | 100% |  | 许志峰; 黄薇; 屠文洋; 霍文列; 屈鹏飞; 谢立英 | 48h | 48h |  |  |
| 49 | 1.3.4.2 | 需求分析外部评审 | manual | 1d | 2017-04-11 A | 2017-04-11 A | 100% |  | 许志峰; 黄薇; 霍文列 | 24h | 24h | PRD确认单 | 评审 |
| 50 | 1.3.5 | UI设计 | manual | 9d | 2017-04-07 A | 2017-04-19 A | 100% |  | 杨理东; 杨逸群 | 144h | 144h | UI设计稿 |  |
| 51 | 1.3.6 | 算法研究并形成文档说明 | manual | 6d | 2017-04-08 A | 2017-04-14 A | 100% |  | 谢立英 | 48h | 48h | WORD文档 |  |

Notes:
- 49: 客户签字

| ID | WBS | Task | Type | Duration | Start | Finish | Complete | Remaining | Actual start | Total slack | Work | Actual work | 工作成果 | 任务类型 |
| --- | --- | --- | --- | --- | --- | --- | --- | --- | --- | --- | --- | --- | --- | --- |
| 52 | 1.4 | **开发测试** |  | 61d | 2017-04-07 | 2017-06-30 | 7% | 56.5d | 2017-03-01 |  | 16550.4h | 958.81h | 概要设计、详细设计、测试相关文档 |  |
| 53 | 1.4.1 | **系统测试准备** |  | 15.26d | 2017-04-01 | 2017-04-24 |  |  |  | 0d |  |  |  |  |
| 54 | 1.4.1.1 | **测试需求** |  | 15.26d | 2017-04-01 | 2017-04-24 |  |  |  | 0d |  |  |  |  |
| 55 | 1.4.1.1.1 | **制订系统测试需求** |  | 15.26d | 2017-04-01 | 2017-04-24 |  |  |  | 0d |  |  |  |  |
| 56 | 1.4.1.1.1.1 | 数据资产管理子系统 | milestone, manual | 0d | 2017-04-01 | 2017-04-01 |  |  |  |  |  |  | 测试需求 | 测试需求 |
| 57 | 1.4.1.1.1.2 | 智能分析子系统 | manual | 11.13d | 2017-04-07 | 2017-04-24 |  |  |  |  |  |  | 测试需求 | 测试需求 |
| 58 | 1.4.1.1.1.3 | 大数据可视化子系统 | manual | 1d | 2017-04-07 | 2017-04-07 |  |  |  |  |  |  | 测试需求 | 测试需求 |
| 59 | 1.4.1.1.1.4 | 智慧商业应用子系统 | manual | 1d | 2017-04-07 | 2017-04-07 |  |  |  |  |  |  | 测试需求 | 测试需求 |
| 60 | 1.4.1.1.1.5 | 移动可视化子系统 | manual | 1d | 2017-04-01 | 2017-04-03 |  |  |  |  |  |  | 测试需求 | 测试需求 |
| 61 | 1.4.1.1.1.6 | 大屏可视化子系统 | manual | 1d | 2017-04-01 | 2017-04-03 |  |  |  |  |  |  | 测试需求 | 测试需求 |
| 62 | 1.4.1.1.1.7 | 数据仓库子系统 | manual | 1d | 2017-04-01 | 2017-04-03 |  |  |  |  |  |  | 测试需求 | 测试需求 |
| 63 | 1.4.1.1.1.8 | 门户平台 | manual | 1d | 2017-04-01 | 2017-04-03 |  |  |  |  |  |  | 测试需求 | 测试需求 |
| 64 | 1.4.1.1.1.9 | **非功能测试需求** |  | 0.88d | 2017-04-07 | 2017-04-07 |  |  |  | 0d |  |  |  |  |
| 65 | 1.4.1.1.1.9.1 | 性能测试需求 | manual | 1d | 2017-04-07 | 2017-04-07 |  |  |  |  |  |  | 测试需求 | 测试需求 |
| 66 | 1.4.1.1.1.9.2 | 安全性测试需求 | manual | 1d | 2017-04-07 | 2017-04-07 |  |  |  |  |  |  | 测试需求 | 测试需求 |
| 67 | 1.4.1.1.1.9.3 | 稳定性测试需求 | manual | 1d | 2017-04-07 | 2017-04-07 |  |  |  |  |  |  | 测试需求 | 测试需求 |
| 68 | 1.4.1.1.1.9.4 | 易用性测试需求 | manual | 1d | 2017-04-07 | 2017-04-07 |  |  |  |  |  |  | 测试需求 | 测试需求 |
| 69 | 1.4.1.1.2 | 测试需求评审 | manual | 3d | 2017-04-07 | 2017-04-11 |  |  |  |  |  |  |  |  |
| 70 | 1.4.1.2 | **测试用例** |  | 5d | 2017-04-07 | 2017-04-14 |  |  |  | 0d |  |  |  |  |
| 71 | 1.4.1.2.1 | **制订系统测试用例** |  | 5d | 2017-04-07 | 2017-04-14 |  |  |  | 0d |  |  |  |  |
| 72 | 1.4.1.2.1.1 | 数据资产管理子系统 | manual | 5d | 2017-04-07 | 2017-04-14 |  |  |  |  |  |  | 系统测试用例 | 系统测试 |
| 73 | 1.4.1.2.1.2 | 智能分析子系统 | manual | 5d | 2017-04-07 | 2017-04-14 |  |  |  |  |  |  | 系统测试用例 | 系统测试 |
| 74 | 1.4.1.2.1.3 | 大数据可视化子系统 | manual | 5d | 2017-04-07 | 2017-04-14 |  |  |  |  |  |  | 系统测试用例 | 系统测试 |
| 75 | 1.4.1.2.1.4 | **智慧商业应用子系统** |  | 0.88d | 2017-04-07 | 2017-04-07 |  |  |  | 0d |  |  |  |  |
| 76 | 1.4.1.2.1.4.1 | 客户画像 | manual | 1d | 2017-04-07 | 2017-04-07 |  |  |  |  |  |  | 系统测试用例 | 系统测试 |
| 77 | 1.4.1.2.1.4.2 | 业态分析 | manual | 0.5d | 2017-04-07 | 2017-04-07 |  |  |  |  |  |  | 系统测试用例 | 系统测试 |
| 78 | 1.4.1.2.1.4.3 | 精准营销 | manual | 0.5d | 2017-04-07 | 2017-04-07 |  |  |  |  |  |  | 系统测试用例 | 系统测试 |
| 79 | 1.4.1.2.1.4.4 | 推广效果评估 | manual | 0.5d | 2017-04-07 | 2017-04-07 |  |  |  |  |  |  | 系统测试用例 | 系统测试 |
| 80 | 1.4.1.2.1.4.5 | 运营监控 | manual | 0.5d | 2017-04-07 | 2017-04-07 |  |  |  |  |  |  | 系统测试用例 | 系统测试 |
| 81 | 1.4.1.2.1.5 | 移动可视化子系统 | manual | 1d | 2017-04-07 | 2017-04-10 |  |  |  |  |  |  | 系统测试用例 | 系统测试 |
| 82 | 1.4.1.2.1.6 | 大屏可视化子系统 | manual | 1d | 2017-04-07 | 2017-04-10 |  |  |  |  |  |  | 系统测试用例 | 系统测试 |
| 83 | 1.4.1.2.1.7 | 数据仓库子系统 | manual | 1d | 2017-04-07 | 2017-04-10 |  |  |  |  |  |  | 系统测试用例 | 系统测试 |
| 84 | 1.4.1.2.1.8 | 门户平台 | manual | 1d | 2017-04-07 | 2017-04-10 |  |  |  |  |  |  | 系统测试用例 | 系统测试 |

| ID | WBS | Task | Type | Duration | Start | Finish | Complete | Remaining | Total slack | Resources | Work | Actual work | 任务类型 | 工作成果 |
| --- | --- | --- | --- | --- | --- | --- | --- | --- | --- | --- | --- | --- | --- | --- |
| 85 | 1.4.1.2.1.9 | **非功能测试用例** |  | 3.88d | 2017-04-07 | 2017-04-12 |  |  | 0d |  |  |  |  |  |
| 86 | 1.4.1.2.1.9.1 | 性能测试用例 | manual | 4d | 2017-04-07 | 2017-04-12 |  |  |  |  |  |  | 系统测试 | 系统测试用例 |
| 87 | 1.4.1.2.1.9.2 | 安全性测试用例 | manual | 2d | 2017-04-07 | 2017-04-10 |  |  |  |  |  |  | 系统测试 | 系统测试用例 |
| 88 | 1.4.1.2.1.9.3 | 稳定性测试用例 | manual | 1d | 2017-04-07 | 2017-04-07 |  |  |  |  |  |  | 系统测试 | 系统测试用例 |
| 89 | 1.4.1.2.1.9.4 | 易用性测试用例 | manual | 1d | 2017-04-07 | 2017-04-07 |  |  |  |  |  |  | 系统测试 | 系统测试用例 |
| 90 | 1.4.1.3 | 系统测试环境准备 | manual | 1d | 2017-04-07 | 2017-04-07 |  |  |  |  |  |  | 系统测试 | 系统测试的软硬件环境 |
| 91 | 1.4.1.4 | 需求跟踪 | manual | 2d | 2017-04-07 | 2017-04-08 |  |  |  |  |  |  | 项目管理 | 需求跟踪表 |
| 92 | 1.4.2 | **概要设计** |  | 10.88d | 2017-04-07 A | 2017-04-21 | 7% | 10.14d | 0d |  | 1718h | 72.95h |  |  |
| 93 | 1.4.2.1 | **总体设计** |  | 9.88d | 2017-04-07 A | 2017-04-20 | 13% | 8.61d | 0d |  | 635h | 72.95h |  |  |
| 94 | 1.4.2.1.1 | **应用架构设计** |  | 0.88d | 2017-04-10 | 2017-04-10 |  |  | 0d |  | 24h |  |  |  |
| 95 | 1.4.2.1.1.1 | 应用体系分析及设计 | manual | 1d | 2017-04-10 | 2017-04-10 |  |  |  | 屠文洋 | 8h |  | 概要设计 | 应用架构设计 |
| 96 | 1.4.2.1.1.2 | 系统边界及子系统设计 | manual | 1d | 2017-04-10 | 2017-04-10 |  |  |  | 屠文洋 | 8h |  | 概要设计 | 应用架构设计 |
| 97 | 1.4.2.1.1.3 | 功能划分及设计 | manual | 1d | 2017-04-10 | 2017-04-10 |  |  |  | 屠文洋 | 8h |  | 概要设计 | 应用架构设计 |
| 98 | 1.4.2.1.2 | **接口设计(优先级低)** |  | 0.88d | 2017-04-10 | 2017-04-10 |  |  | 0d |  | 16h |  |  |  |
| 99 | 1.4.2.1.2.1 | 接口整体设计 | manual | 1d | 2017-04-10 | 2017-04-10 |  |  |  | 屠文洋 | 8h |  | 概要设计 | 接口设计 |
| 100 | 1.4.2.1.2.2 | 智慧商业应用子系统接口设计 | manual | 1d | 2017-04-10 | 2017-04-10 |  |  |  | 屠文洋 | 8h |  | 概要设计 | 接口设计 |
| 101 | 1.4.2.1.3 | **技术架构设计** |  | 1.88d | 2017-04-11 | 2017-04-12 |  |  | 0d |  | 24h |  |  |  |
| 102 | 1.4.2.1.3.1 | 总体技术架构设计 | manual | 1d | 2017-04-11 | 2017-04-11 |  |  |  | 屠文洋 | 8h |  | 概要设计 | 技术架构设计 |
| 103 | 1.4.2.1.3.2 | 关键技术设计 | manual | 2d | 2017-04-11 | 2017-04-12 |  |  |  | 屠文洋 | 16h |  | 概要设计 | 技术架构设计 |
| 104 | 1.4.2.1.4 | **数据架构规划及设计(优先级高)** |  | 5d | 2017-04-07 | 2017-04-14 |  |  |  | 屈鹏飞 | 253h |  |  |  |
| 105 | 1.4.2.1.4.1 | **数据仓库概念模型(优先级高)-03** |  | 1d | 2017-04-15 | 2017-04-17 |  |  | 0d | 屈鹏飞 | 167h |  | 概要设计 | 数据架构规划及设计 |
| 106 | 1.4.2.1.4.1.1 | 主题域与主要实体 | manual | 2d | 2017-04-15 | 2017-04-17 |  |  |  | 屈鹏飞; 屠文洋 | 32h |  | 概要设计 | 数据架构规划及设计 |
| 107 | 1.4.2.1.4.1.2 | 细节数据粒度 | manual | 2d | 2017-04-15 | 2017-04-17 |  |  |  | 屈鹏飞; 屠文洋 | 32h |  | 概要设计 | 数据架构规划及设计 |
| 108 | 1.4.2.1.4.1.3 | 历史数据范围 | manual | 2d | 2017-04-15 | 2017-04-17 |  |  |  | 屈鹏飞; 屠文洋 | 32h |  | 概要设计 | 数据架构规划及设计 |
| 109 | 1.4.2.1.4.1.4 | 数据温度与结构 | manual | 2d | 2017-04-15 | 2017-04-17 |  |  |  | 屈鹏飞; 屠文洋 | 32h |  | 概要设计 | 数据架构规划及设计 |
| 110 | 1.4.2.1.4.1.5 | 数据与应用关系 | manual | 2d | 2017-04-15 | 2017-04-17 |  |  |  | 屈鹏飞; 屠文洋 | 32h |  | 概要设计 | 数据架构规划及设计 |

| ID | WBS | Task | Type | Duration | Start | Finish | Complete | Remaining | Total slack | Resources | Work | Actual work | 任务类型 | 工作成果 |
| --- | --- | --- | --- | --- | --- | --- | --- | --- | --- | --- | --- | --- | --- | --- |
| 111 | 1.4.2.1.4.2 | **数据生产运营方案** |  | 1.88d | 2017-04-12 | 2017-04-13 |  |  | 0d | 屈鹏飞; 屠文洋 | 46h |  | 概要设计 | 数据架构规划及设计 |
| 112 | 1.4.2.1.4.2.1 | 源数据采集(优先级高)-02（123） | manual | 2d | 2017-04-12 | 2017-04-13 |  |  |  | 屈鹏飞 | 16h |  | 概要设计 | 数据采集方案 |
| 113 | 1.4.2.1.5 | **数据库规划及设计(优先级最高)** |  | 9.88d | 2017-04-07 A | 2017-04-20 | 32% | 6.76d | 0d | 屈鹏飞 | 254h | 72.95h |  |  |
| 114 | 1.4.2.1.5.1 | 共享交换数据库设计(优先级最高)-02 | manual | 4d | 2017-04-12 A | 2017-04-15 A | 100% |  |  | 屈鹏飞 | 32h | 32h | 概要设计 | 数据采集第三方方案 |
| 115 | 1.4.2.1.5.2 | **中心数据仓库逻辑模型(优先级最高)-04** |  | 2.88d | 2017-04-18 | 2017-04-20 |  |  | 0d | 屈鹏飞 | 95h |  | 概要设计 | 数据库规划及设计 |
| 116 | 1.4.2.1.5.2.1 | 操作数据存储模型 | manual | 3d | 2017-04-18 | 2017-04-20 |  |  |  | 屈鹏飞 | 24h |  | 概要设计 | 数据库规划及设计 |
| 117 | 1.4.2.1.5.2.2 | 数据仓库实体关系模型 | manual | 3d | 2017-04-18 | 2017-04-20 |  |  |  | 屈鹏飞 | 24h |  | 概要设计 | 数据库规划及设计 |
| 118 | 1.4.2.1.5.2.3 | 数据集市多维模型 | manual | 3d | 2017-04-18 | 2017-04-20 |  |  |  | 屈鹏飞 | 24h |  | 概要设计 | 数据库规划及设计 |
| 119 | 1.4.2.1.5.3 | 智慧商业应用子系统数据库设计(优先级最高)-01 | manual | 2d | 2017-04-07 A | 2017-04-10 A | 100% |  |  | 屈鹏飞 | 16h | 16h | 概要设计 | pdm、概要设计文档 |
| 120 | 1.4.2.1.5.4 | 各部分数据库对接(优先级最高)-02 | manual | 4d | 2017-04-12 | 2017-04-15 |  |  |  | 屈鹏飞 | 32h |  | 概要设计 | 数据库规划及设计 |
| 121 | 1.4.2.1.6 | **部署架构设计(优先级低)** |  | 0.88d | 2017-04-13 | 2017-04-13 |  |  | 0d |  | 16h |  |  |  |
| 122 | 1.4.2.1.6.1 | 应用逻辑部署架构设计 | manual | 1d | 2017-04-13 | 2017-04-13 |  |  |  | 屠文洋 | 8h |  | 概要设计 | 部署架构设计 |
| 123 | 1.4.2.1.6.2 | 应用物理部署架构设计 | manual | 1d | 2017-04-13 | 2017-04-13 |  |  |  | 屠文洋 | 8h |  | 概要设计 | 部署架构设计 |
| 124 | 1.4.2.1.7 | **非功能性设计(优先级低)** |  | 0.88d | 2017-04-13 | 2017-04-13 |  |  | 0d |  | 40h |  |  |  |
| 125 | 1.4.2.1.7.1 | 性能设计 | manual | 1d | 2017-04-13 | 2017-04-13 |  |  |  | 屠文洋 | 8h |  | 概要设计 | 性能设计 |
| 126 | 1.4.2.1.7.2 | 可靠性设计 | manual | 1d | 2017-04-13 | 2017-04-13 |  |  |  | 屠文洋 | 8h |  | 概要设计 | 可靠性设计 |
| 127 | 1.4.2.1.7.3 | 扩展性设计 | manual | 1d | 2017-04-13 | 2017-04-13 |  |  |  | 屠文洋 | 8h |  | 概要设计 | 扩展性设计 |
| 128 | 1.4.2.1.7.4 | 安全性设计 | manual | 1d | 2017-04-13 | 2017-04-13 |  |  |  | 屠文洋 | 8h |  | 概要设计 | 安全性设计 |
| 129 | 1.4.2.1.7.5 | 易用性设计 | manual | 1d | 2017-04-13 | 2017-04-13 |  |  |  | 屠文洋 | 8h |  | 概要设计 | 易用性设计 |
| 130 | 1.4.2.1.8 | 软件产品限制、约束及应用策略(优先级低) | manual | 1d | 2017-04-13 | 2017-04-13 |  |  |  | 屠文洋 | 8h |  |  | 软件产品限制、约束及应用策略 |
| 131 | 1.4.2.2 | **模块设计(优先级最高)** |  | 10.88d | 2017-04-07 | 2017-04-21 |  |  | 0d | 黄薇; 霍文列; 屠文洋; 屈鹏飞; 谢立英 | 1043h |  |  |  |
| 132 | 1.4.2.2.1 | **智慧商业应用子系统** |  | 8d | 2017-04-12 | 2017-04-21 |  |  |  | 黄薇; 霍文列 | 208h |  |  |  |
| 133 | 1.4.2.2.1.1 | 客户画像 | manual | 2d | 2017-04-08 | 2017-04-10 |  |  |  | 陆剑飞 | 16h |  | 概要设计 | 概要设计说明书 |
| 134 | 1.4.2.2.1.2 | 业态分析 | manual | 2d | 2017-04-11 | 2017-04-12 |  |  |  | 陆剑飞 | 16h |  | 概要设计 | 概要设计说明书 |
| 135 | 1.4.2.2.1.3 | 精准营销 | manual | 2d | 2017-04-13 | 2017-04-14 |  |  |  | 陆剑飞 | 16h |  | 概要设计 | 概要设计说明书 |
| 136 | 1.4.2.2.1.4 | 推广效果评估 | manual | 2d | 2017-04-15 | 2017-04-17 |  |  |  | 陆剑飞 | 16h |  | 概要设计 | 概要设计说明书 |
| 137 | 1.4.2.2.1.5 | 运营监控 | manual | 2d | 2017-04-18 | 2017-04-19 |  |  |  | 陆剑飞 | 16h |  | 概要设计 | 概要设计说明书 |
| 138 | 1.4.2.2.2 | 移动可视化子系统 | manual | 8d | 2017-04-12 | 2017-04-21 |  |  |  | 黄薇; 霍文列 | 128h |  | 概要设计 | 概要设计说明书 |
| 139 | 1.4.2.2.3 | 大屏可视化子系统 | manual | 8d | 2017-04-12 | 2017-04-21 |  |  |  | 黄薇; 霍文列 | 128h |  | 概要设计 | 概要设计说明书 |

| ID | WBS | Task | Type | Duration | Start | Finish | Total slack | Resources | Work | 任务类型 | 工作成果 |
| --- | --- | --- | --- | --- | --- | --- | --- | --- | --- | --- | --- |
| 140 | 1.4.2.2.4 | **数据仓库子系统** |  | 1d | 2017-04-07 | 2017-04-10 |  | 屈鹏飞; 谢立英 | 16h | 概要设计 | 概要设计说明书 |
| 141 | 1.4.2.2.4.1 | **数据仓库** |  | 1d | 2017-04-07 | 2017-04-10 | 0d |  |  | 概要设计 | 概要设计说明书 |
| 142 | 1.4.2.2.4.1.1 | 主题管理 | manual | 1d | 2017-04-07 | 2017-04-10 |  |  |  | 概要设计 | 概要设计说明书 |
| 143 | 1.4.2.2.4.1.2 | 数仓建模 | manual | 1d | 2017-04-07 | 2017-04-10 |  |  |  | 概要设计 | 概要设计说明书 |
| 144 | 1.4.2.2.4.1.3 | 度量和维度管理 | manual | 1d | 2017-04-07 | 2017-04-10 |  |  |  | 概要设计 | 概要设计说明书 |
| 145 | 1.4.2.2.4.1.4 | 数据装载 | manual | 1d | 2017-04-07 | 2017-04-10 |  |  |  | 概要设计 | 概要设计说明书 |
| 146 | 1.4.2.2.4.2 | **监管模块** |  | 1d | 2017-04-07 | 2017-04-10 | 0d |  |  | 概要设计 | 概要设计说明书 |
| 147 | 1.4.2.2.4.2.1 | 调度日志 | manual | 1d | 2017-04-07 | 2017-04-10 |  |  |  | 概要设计 | 概要设计说明书 |
| 148 | 1.4.2.2.4.2.2 | 系统运行状态 | manual | 1d | 2017-04-07 | 2017-04-10 |  |  |  | 概要设计 | 概要设计说明书 |
| 149 | 1.4.2.2.5 | 门户平台 | manual | 8d | 2017-04-12 | 2017-04-21 |  | 黄薇; 霍文列 | 128h | 概要设计 | 概要设计说明书 |
| 150 | 1.4.2.3 | 合成并优化概要设计说明书 | manual | 1d | 2017-04-21 | 2017-04-21 |  | 屠文洋; 陆剑飞 | 16h | 概要设计 | 概要设计说明书 |
| 151 | 1.4.2.4 | **概要设计评审** |  | 1d | 2017-04-21 | 2017-04-21 |  |  | 24h | 概要设计 |  |
| 152 | 1.4.2.4.1 | 概要设计内审 | manual | 1d | 2017-04-21 | 2017-04-21 |  | 屠文洋; 陆剑飞; 许志峰 | 24h | 项目管理 | 概要设计说明书 |
| 153 | 1.4.3 | **详细设计** |  | 16.88d | 2017-04-20 | 2017-05-13 | 0d |  | 184h |  | 资源暂无明确 |
| 154 | 1.4.3.1 | **详细模块设计** |  | 16.88d | 2017-04-20 | 2017-05-13 | 0d |  | 168h |  |  |
| 155 | 1.4.3.1.1 | 总体详细设计 | manual | 2d | 2017-04-20 | 2017-04-24 |  | 屠文洋 | 16h | 详细设计 | 详细设计说明书 |
| 156 | 1.4.3.1.2 | **智慧商业应用子系统** |  | 13.88d | 2017-04-25 | 2017-05-13 | 0d |  | 120h |  |  |
| 157 | 1.4.3.1.2.1 | 客户画像 | manual | 2d | 2017-04-25 | 2017-04-27 |  | 屠文洋 | 16h | 详细设计 | 详细设计说明书 |
| 158 | 1.4.3.1.2.2 | 业态分析 | manual | 4d | 2017-04-28 | 2017-05-03 |  | 屠文洋 | 32h | 详细设计 | 详细设计说明书 |
| 159 | 1.4.3.1.2.3 | 精准营销 | manual | 3d | 2017-05-04 | 2017-05-06 |  | 屠文洋 | 24h | 详细设计 | 详细设计说明书 |
| 160 | 1.4.3.1.2.4 | 推广效果评估 | manual | 3d | 2017-05-08 | 2017-05-10 |  | 屠文洋 | 24h | 详细设计 | 详细设计说明书 |
| 161 | 1.4.3.1.2.5 | 运营监控 | manual | 3d | 2017-05-11 | 2017-05-13 |  | 屠文洋 | 24h | 详细设计 | 详细设计说明书 |
| 162 | 1.4.3.1.3 | 移动可视化子系统 | manual | 1d | 2017-04-20 | 2017-04-21 |  | ? | 8h | 详细设计 | 详细设计说明书 |
| 163 | 1.4.3.1.4 | 大屏可视化子系统 | manual | 1d | 2017-04-20 | 2017-04-21 |  | ? | 8h | 详细设计 | 详细设计说明书 |
| 164 | 1.4.3.1.5 | 数据仓库子系统 | manual | 1d | 2017-04-20 | 2017-04-21 |  | ? | 8h | 详细设计 | 详细设计说明书 |
| 165 | 1.4.3.1.6 | 门户平台 | manual | 1d | 2017-04-20 | 2017-04-21 |  | ? | 8h | 详细设计 | 详细设计说明书 |

| ID | WBS | Task | Type | Duration | Start | Finish | Complete | Remaining | Total slack | Resources | Work | Actual work | 任务类型 | 工作成果 |
| --- | --- | --- | --- | --- | --- | --- | --- | --- | --- | --- | --- | --- | --- | --- |
| 166 | 1.4.3.2 | **详细设计评审** |  | 0.88d | 2017-04-28 | 2017-04-28 |  |  | 0d |  | 16h |  |  |  |
| 167 | 1.4.3.2.1 | 详细设计内审 | manual | 1d | 2017-04-28 | 2017-04-28 |  |  |  | 屠文洋; 许志峰 | 16h |  | 项目管理 | 详细设计说明书、内审申请 |
| 168 | 1.4.4 | **编码与单元测试** |  | 47.88d | 2017-04-05 A | 2017-06-10 | 21% | 37.64d | 0d |  | 5656.4h | 885.86h |  |  |
| 169 | 1.4.4.1 | **模块编码实现** |  | 47.88d | 2017-04-05 A | 2017-06-10 | 22% | 37.14d | 0d |  | 5656.4h | 885.86h |  |  |
| 170 | 1.4.4.1.1 | **数据资产管理子系统** |  | 36.88d | 2017-04-05 | 2017-05-25 |  |  | 0d | 裴靖东 | 1545.4h |  |  |  |
| 171 | 1.4.4.1.1.1 | **HBASE 数据建模** |  | 7.88d | 2017-04-05 | 2017-04-15 |  |  | 0d |  | 72h |  | 编码与单元测试 |  |
| 172 | 1.4.4.1.1.1.1 | 技术预研 | manual | 4d | 2017-04-05 | 2017-04-08 |  |  |  | 林朋 | 32h |  | 编码与单元测试 | 源代码 |
| 173 | 1.4.4.1.1.1.2 | 数据存取方法封装 | manual | 2d | 2017-04-10 | 2017-04-11 |  |  |  | 林朋 | 16h |  | 编码与单元测试 | 源代码 |
| 174 | 1.4.4.1.1.1.3 | ROWKEY设计,存储性能测试 | manual | 1d | 2017-04-12 | 2017-04-12 |  |  |  | 林朋 | 8h |  | 编码与单元测试 | 源代码 |
| 175 | 1.4.4.1.1.1.4 | HBASE数据转换过程 | manual | 1d | 2017-04-13 | 2017-04-13 |  |  |  | 林朋 | 8h |  | 编码与单元测试 | 源代码 |
| 176 | 1.4.4.1.1.1.5 | 数据仓库对接 | manual | 1d | 2017-04-15 | 2017-04-15 |  |  |  | 林朋 | 8h |  | 编码与单元测试 | 源代码 |
| 177 | 1.4.4.1.1.2 | **SPARK 数据处理工具** |  | 8.88d | 2017-04-05 | 2017-04-17 |  |  | 0d |  | 130.4h |  | 编码与单元测试 |  |
| 178 | 1.4.4.1.1.2.1 | 技术预研, RDD原理 | manual | 4d | 2017-04-05 | 2017-04-08 |  |  |  | 裴靖东 | 32h |  | 编码与单元测试 | 源代码 |
| 179 | 1.4.4.1.1.2.2 | spark数据加载(HDFS/HBASE) | manual | 2d | 2017-04-10 | 2017-04-11 |  |  |  | 裴靖东 | 16h |  | 编码与单元测试 | 源代码 |
| 180 | 1.4.4.1.1.2.3 | spark数据转换脚本(sparkSql)应用 | manual | 2d | 2017-04-12 | 2017-04-13 |  |  |  | 裴靖东 | 16h |  | 编码与单元测试 | 源代码 |
| 181 | 1.4.4.1.1.2.4 | spark数据回写 | manual | 2d | 2017-04-13 | 2017-04-14 |  |  |  | 裴靖东 | 16h |  | 编码与单元测试 | 源代码 |
| 182 | 1.4.4.1.1.2.5 | spark转换过程封装,添加调度任务 | manual | 2d | 2017-04-15 | 2017-04-17 |  |  |  | 裴靖东 | 50.4h |  | 编码与单元测试 | 源代码 |
| 183 | 1.4.4.1.1.3 | **数据接口** |  | 7.88d | 2017-04-17 | 2017-04-26 |  |  | 0d |  | 72h |  | 编码与单元测试 |  |
| 184 | 1.4.4.1.1.3.1 | 数据采集接口(待定) | manual | 5d | 2017-04-17 | 2017-04-21 |  |  |  | 裴靖东 | 40h |  | 编码与单元测试 | 源代码 |
| 185 | 1.4.4.1.1.3.2 | 数据使用接口(HBASE/HIVE/IMPALA) | manual | 4d | 2017-04-21 | 2017-04-26 |  |  |  | 裴靖东 | 32h |  | 编码与单元测试 | 源代码 |
| 186 | 1.4.4.1.1.4 | **系统功能完善** |  | 36.88d | 2017-04-05 | 2017-05-25 |  |  | 0d |  | 632h |  | 编码与单元测试 |  |
| 187 | 1.4.4.1.1.4.1 | BUG修改 | manual | 9d | 2017-04-05 | 2017-04-15 |  |  |  | 黄光为; 包刚 | 144h |  | 编码与单元测试 | 源代码 |
| 188 | 1.4.4.1.1.4.2 | 页面风格调整 | manual | 1d | 2017-04-28 | 2017-04-28 |  |  |  | 冯泽刚 | 8h |  | 编码与单元测试 | 源代码 |
| 189 | 1.4.4.1.1.4.3 | 数据转换过程 | manual | 2d | 2017-04-27 | 2017-04-28 |  |  |  | 裴靖东 | 16h |  | 编码与单元测试 | 源代码 |
| 190 | 1.4.4.1.1.4.4 | 数据增量采集/导出 | manual | 3d | 2017-04-17 | 2017-04-19 |  |  |  | 黄光为 | 24h |  | 编码与单元测试 | 源代码 |
| 191 | 1.4.4.1.1.4.5 | 系统监控 | manual | 3d | 2017-04-20 | 2017-04-22 |  |  |  | 黄光为 | 24h |  | 编码与单元测试 | 源代码 |
| 192 | 1.4.4.1.1.4.6 | 调度任务及日志 | manual | 5d | 2017-04-24 | 2017-04-28 |  |  |  | 黄光为 | 40h |  | 编码与单元测试 | 源代码 |
| 193 | 1.4.4.1.1.4.7 | 血缘及影响关系 | manual | 5d | 2017-04-17 | 2017-04-21 |  |  |  | 包刚 | 40h |  | 编码与单元测试 | 源代码 |
| 194 | 1.4.4.1.1.4.8 | 数据地图 | manual | 25d | 2017-04-22 | 2017-05-25 |  |  |  | 包刚 | 200h |  | 编码与单元测试 | 源代码 |
| 195 | 1.4.4.1.1.4.9 | 数据权限 | manual | 3d | 2017-04-26 | 2017-04-28 |  |  |  | 包刚 | 24h |  | 编码与单元测试 | 源代码 |
| 196 | 1.4.4.1.1.4.10 | 完善用户手册模块内容 | manual | 4d | 2017-04-19 | 2017-04-22 |  |  |  | 俞周宏; 何秀莲 | 64h |  | 编码与单元测试 | 源代码 |
| 197 | 1.4.4.1.1.4.11 | 数据检索及聚合 | manual | 3d | 2017-04-17 | 2017-04-19 |  |  |  | 林朋 | 24h |  | 编码与单元测试 | 源代码 |
| 198 | 1.4.4.1.1.4.12 | 前端完善 | manual | 3d | 2017-04-17 | 2017-04-19 |  |  |  | 林朋 | 24h |  | 编码与单元测试 | 源代码 |
| 199 | 1.4.4.1.1.5 | 数据仓库测试联调 | manual | 18d | 2017-04-05 | 2017-04-28 |  |  |  | 冯泽刚; 屈鹏飞 | 288h |  | 编码与单元测试 | 源代码 |

| ID | WBS | Task | Type | Duration | Start | Finish | Complete | Remaining | Total slack | Resources | Work | Actual work | 任务类型 | 工作成果 |
| --- | --- | --- | --- | --- | --- | --- | --- | --- | --- | --- | --- | --- | --- | --- |
| 200 | 1.4.4.1.1.6 | **集群环境迁移** |  | 15.88d | 2017-04-07 | 2017-04-28 |  |  | 0d |  | 56h |  | 编码与单元测试 | 集群配置手册 |
| 201 | 1.4.4.1.1.6.1 | 集群环境调整 | manual | 2d | 2017-04-07 | 2017-04-08 |  |  |  | 俞周宏 | 16h |  | 编码与单元测试 |  |
| 202 | 1.4.4.1.1.6.2 | 集群环境迁移 | manual | 3d | 2017-04-24 | 2017-04-26 |  |  |  | 俞周宏 | 24h |  | 编码与单元测试 |  |
| 203 | 1.4.4.1.1.6.3 | 业务系统验证 | manual | 2d | 2017-04-27 | 2017-04-28 |  |  |  | 俞周宏 | 16h |  | 编码与单元测试 |  |
| 204 | 1.4.4.1.2 | **智能分析子系统** |  | 46.88d | 2017-04-06 A | 2017-06-10 | 39% | 28.6d | 0d | 何平 | 951h | 290.86h |  |  |
| 205 | 1.4.4.1.2.1 | 后台迁移 | manual | 2d | 2017-04-06 A | 2017-04-07 A | 100% |  |  | 何平 | 16h | 16h | 编码与单元测试 | 源代码 |
| 206 | 1.4.4.1.2.2 | **基础信息管理** |  | 2d | 2017-04-07 A | 2017-04-08 A | 100% |  |  |  | 24h | 24h | 编码与单元测试 | 源代码 |
| 207 | 1.4.4.1.2.2.1 | **数据源管理** |  | 2d | 2017-04-07 A | 2017-04-08 A | 100% |  |  |  | 24h | 24h | 编码与单元测试 | 源代码 |
| 208 | 1.4.4.1.2.2.1.1 | 数据源连接 | manual | 1d | 2017-04-07 A | 2017-04-07 A | 100% |  |  | 何平 | 8h | 8h | 编码与单元测试 | 源代码 |
| 209 | 1.4.4.1.2.2.1.2 | 数据源表信息接口 | manual | 1d | 2017-04-07 A | 2017-04-07 A | 100% |  |  | 何平 | 8h | 8h | 编码与单元测试 | 源代码 |
| 210 | 1.4.4.1.2.2.1.3 | 数据源字段信息接口 | manual | 1d | 2017-04-08 A | 2017-04-08 A | 100% |  |  | 何平 | 8h | 8h | 编码与单元测试 | 源代码 |
| 211 | 1.4.4.1.2.3 | **自助分析(优先级别最低)** |  | 11d | 2017-04-10 A | 2017-04-24 | 95% | 0.58d |  |  | 152h | 144h | 编码与单元测试 | 源代码 |
| 212 | 1.4.4.1.2.3.1 | 字段选择 | manual | 1d | 2017-04-10 A | 2017-04-10 A | 100% |  |  | 王广园; 何平 | 8h | 8h | 编码与单元测试 | 源代码 |
| 213 | 1.4.4.1.2.3.2 | 字段设置 | manual | 1d | 2017-04-11 A | 2017-04-11 A | 100% |  |  | 王广园; 何平 | 8h | 8h | 编码与单元测试 | 源代码 |
| 214 | 1.4.4.1.2.3.3 | 汇总设置 | manual | 1d | 2017-04-12 A | 2017-04-12 A | 100% |  |  | 王广园; 何平 | 8h | 8h | 编码与单元测试 | 源代码 |
| 215 | 1.4.4.1.2.3.4 | 高亮设置 | manual | 2d | 2017-04-18 A | 2017-04-19 A | 100% |  |  | 王广园 | 16h | 16h | 编码与单元测试 | 源代码 |
| 216 | 1.4.4.1.2.3.5 | 过滤条件 | manual | 1d | 2017-04-10 A | 2017-04-10 A | 100% |  |  | 郑开丽; 何平 | 8h | 8h | 编码与单元测试 | 源代码 |
| 217 | 1.4.4.1.2.3.6 | 数据筛选 | manual | 1d | 2017-04-11 A | 2017-04-11 A | 100% |  |  | 郑开丽; 何平 | 8h | 8h | 编码与单元测试 | 源代码 |
| 218 | 1.4.4.1.2.3.7 | 条件关系 | manual | 2d | 2017-04-19 A | 2017-04-20 A | 100% |  |  | 郑开丽 | 16h | 16h | 编码与单元测试 | 源代码 |
| 219 | 1.4.4.1.2.3.8 | 条件布局 | manual | 1d | 2017-04-13 A | 2017-04-13 A | 100% |  |  | 郑开丽 | 8h | 8h | 编码与单元测试 | 源代码 |
| 220 | 1.4.4.1.2.3.9 | 表关系 | manual | 2d | 2017-04-10 A | 2017-04-11 A | 100% |  |  | 何平 | 16h | 16h | 编码与单元测试 | 源代码 |
| 221 | 1.4.4.1.2.3.10 | 表格属性设置 | manual | 1d | 2017-04-12 A | 2017-04-12 A | 100% |  |  | 何平 | 8h | 8h | 编码与单元测试 | 源代码 |
| 222 | 1.4.4.1.2.3.11 | 打印 | manual | 1d | 2017-04-14 | 2017-04-14 |  |  |  | 郑开丽 | 8h |  | 编码与单元测试 | 源代码 |
| 223 | 1.4.4.1.2.3.12 | 导出 | manual | 2d | 2017-04-20 A | 2017-04-21 A | 100% |  |  | 何平 | 16h | 16h | 编码与单元测试 | 源代码 |
| 224 | 1.4.4.1.2.3.13 | 预览 | manual | 3d | 2017-04-20 A | 2017-04-24 A | 100% |  |  | 王广园 | 24h | 24h | 编码与单元测试 | 源代码 |

Notes:
- 215: 重新安排TO何平
- 218: 重新安排TO何平
- 224: 重新安排TO何平

| ID | WBS | Task | Type | Duration | Start | Finish | Complete | Remaining | Total slack | Resources | Work | Actual work | 任务类型 | 工作成果 |
| --- | --- | --- | --- | --- | --- | --- | --- | --- | --- | --- | --- | --- | --- | --- |
| 225 | 1.4.4.1.2.4 | **多维分析** |  | 5d | 2017-04-18 | 2017-04-24 |  |  |  |  | 168h |  | 编码与单元测试 | 源代码 |
| 226 | 1.4.4.1.2.4.1 | **模型管理** |  | 5d | 2017-04-18 | 2017-04-24 |  |  |  | 郑开丽 | 168h |  | 编码与单元测试 | 源代码 |
| 227 | 1.4.4.1.2.4.1.1 | 快速构建模型 | manual | 3d | 2017-04-20 | 2017-04-24 |  |  |  | 何平 | 24h |  | 编码与单元测试 | 源代码 |
| 228 | 1.4.4.1.2.4.1.2 | 模型要素 | manual | 2d | 2017-04-18 | 2017-04-19 |  |  |  | 郑开丽 | 16h |  | 编码与单元测试 | 源代码 |
| 229 | 1.4.4.1.2.4.1.3 | **立方体集** |  | 4d | 2017-04-19 | 2017-04-24 |  |  |  | 郑开丽 | 88h |  | 编码与单元测试 | 源代码 |
| 230 | 1.4.4.1.2.4.1.3.1 | 维度集 | manual | 1d | 2017-04-19 | 2017-04-19 |  |  |  | 郑开丽 | 8h |  | 编码与单元测试 | 源代码 |
| 231 | 1.4.4.1.2.4.1.3.2 | 度量集 | manual | 1d | 2017-04-20 | 2017-04-20 |  |  |  | 郑开丽 | 8h |  | 编码与单元测试 | 源代码 |
| 232 | 1.4.4.1.2.4.1.3.3 | 计算成员 | manual | 1d | 2017-04-21 | 2017-04-21 |  |  |  | 郑开丽 | 8h |  | 编码与单元测试 | 源代码 |
| 233 | 1.4.4.1.2.4.1.3.4 | XML构建 | manual | 2d | 2017-04-21 | 2017-04-24 |  |  |  | 何平; 郑开丽 | 32h |  | 编码与单元测试 | 源代码 |
| 234 | 1.4.4.1.2.5 | **数据预警** |  | 5d | 2017-04-18 | 2017-04-24 |  |  |  |  | 56h |  | 编码与单元测试 | 源代码 |
| 235 | 1.4.4.1.2.5.1 | 规则管理 | manual | 2d | 2017-04-18 | 2017-04-19 |  |  |  | 王广园 | 16h |  | 编码与单元测试 | 源代码 |
| 236 | 1.4.4.1.2.5.2 | 策略管理 | manual | 2d | 2017-04-19 | 2017-04-20 |  |  |  | 王广园 | 16h |  | 编码与单元测试 | 源代码 |
| 237 | 1.4.4.1.2.5.3 | 邮件预警 | manual | 3d | 2017-04-20 | 2017-04-24 |  |  |  | 王广园 | 24h |  |  |  |
| 238 | 1.4.4.1.2.6 | 数据挖掘分析接口(优先级别最低) | manual | 8d | 2017-06-01 | 2017-06-10 |  |  |  |  |  |  | 编码与单元测试 | 源代码 |
| 239 | 1.4.4.1.2.7 | **仪表盘** |  | 7d | 2017-04-20 | 2017-04-28 |  |  |  |  | 160h |  | 编码与单元测试 | 源代码 |
| 240 | 1.4.4.1.2.7.1 | 设计器 | manual | 3d | 2017-04-20 | 2017-04-24 |  |  |  | 张水江 | 24h |  | 编码与单元测试 | 源代码 |
| 241 | 1.4.4.1.2.7.2 | 组件目录 | manual | 2d | 2017-04-24 | 2017-04-25 |  |  |  | 郑开丽 | 16h |  | 编码与单元测试 | 源代码 |
| 242 | 1.4.4.1.2.7.3 | 仪表盘管理 | manual | 5d? | 2017-04-24 | 2017-04-28 |  |  |  | 何平; 王广园; 郑开丽 | 120h |  |  |  |
| 243 | 1.4.4.1.3 | **大数据可视化子系统** |  | 16.88d | 2017-04-06 A | 2017-04-28 | 66% | 5.82d | 0d | 潘海洋 | 775h | 476.48h |  |  |
| 244 | 1.4.4.1.3.1 | **图表组件** |  | 7.88d | 2017-04-06 A | 2017-04-17 A | 100% |  |  |  | 80h | 80h | 编码与单元测试 | 源代码 |
| 245 | 1.4.4.1.3.1.1 | 添加表格、字符云、块状地图 | manual | 2d | 2017-04-06 A | 2017-04-07 A | 100% |  |  | 吕腾飞 | 16h | 16h | 编码与单元测试 | 源代码 |
| 246 | 1.4.4.1.3.1.2 | 添加关系图、树图 | manual | 2d | 2017-04-08 A | 2017-04-10 A | 100% |  |  | 吕腾飞 | 16h | 16h | 编码与单元测试 | 源代码 |
| 247 | 1.4.4.1.3.1.3 | 添加gis地图 | manual | 2d | 2017-04-11 A | 2017-04-12 A | 100% |  |  | 吕腾飞 | 16h | 16h | 编码与单元测试 | 源代码 |
| 248 | 1.4.4.1.3.1.4 | 添加日期组件 | manual | 2d | 2017-04-13 A | 2017-04-14 A | 100% |  |  | 吕腾飞 | 16h | 16h | 编码与单元测试 | 源代码 |
| 249 | 1.4.4.1.3.1.5 | 添加图片组件 | manual | 2d | 2017-04-15 A | 2017-04-17 A | 100% |  |  | 吕腾飞 | 16h | 16h | 编码与单元测试 | 源代码 |

Notes:
- 249: 工作延时

| ID | WBS | Task | Type | Duration | Start | Finish | Complete | Remaining | Total slack | Resources | Work | Actual work | 任务类型 | 工作成果 |
| --- | --- | --- | --- | --- | --- | --- | --- | --- | --- | --- | --- | --- | --- | --- |
| 250 | 1.4.4.1.3.2 | **图表属性** |  | 4.88d | 2017-04-18 A | 2017-04-24 | 60% | 1.95d | 0d |  | 48h | 28.8h | 编码与单元测试 | 源代码 |
| 251 | 1.4.4.1.3.2.1 | 常规图表属性设置 | manual | 2d | 2017-04-18 A | 2017-04-19 A | 100% |  |  | 吕腾飞 | 16h | 16h | 编码与单元测试 | 源代码 |
| 252 | 1.4.4.1.3.2.2 | gis地图属性设置 | manual | 2d | 2017-04-20 A | 2017-04-21 | 80% | 0.4d |  | 吕腾飞 | 16h | 12.8h | 编码与单元测试 | 源代码 |
| 253 | 1.4.4.1.3.2.3 | 图形和其他组件属性设置 | manual | 2d | 2017-04-22 | 2017-04-24 |  |  |  | 吕腾飞 | 16h |  | 编码与单元测试 | 源代码 |
| 254 | 1.4.4.1.3.3 | **大屏画布** |  | 3.88d | 2017-04-06 A | 2017-04-11 A | 100% |  |  |  | 40h | 40h | 编码与单元测试 | 源代码 |
| 255 | 1.4.4.1.3.3.1 | 界面开发 | manual | 3d | 2017-04-06 A | 2017-04-08 A | 100% |  |  | 张水江 | 24h | 24h | 编码与单元测试 | 源代码 |
| 256 | 1.4.4.1.3.3.2 | 属性调整 | manual | 2d | 2017-04-10 A | 2017-04-11 A | 100% |  |  | 张水江 | 16h | 16h | 编码与单元测试 | 源代码 |
| 257 | 1.4.4.1.3.4 | **移动端画布** |  | 3.88d | 2017-04-12 A | 2017-04-17 | 60% | 1.55d | 0d |  | 40h | 24h | 编码与单元测试 | 源代码 |
| 258 | 1.4.4.1.3.4.1 | 界面开发 | manual | 3d | 2017-04-12 A | 2017-04-14 A | 100% |  |  | 张水江 | 24h | 24h | 编码与单元测试 | 源代码 |
| 259 | 1.4.4.1.3.4.2 | 属性调整 | manual | 2d | 2017-04-15 | 2017-04-17 |  |  |  | 张水江 | 16h |  | 编码与单元测试 | 源代码 |
| 260 | 1.4.4.1.3.5 | **导出报表** |  | 5.88d | 2017-04-06 A | 2017-04-13 A | 100% |  |  |  | 56h | 56h | 编码与单元测试 | 源代码 |
| 261 | 1.4.4.1.3.5.1 | 导出doc | manual | 2d | 2017-04-06 A | 2017-04-07 A | 100% |  |  | 陈江 | 16h | 16h | 编码与单元测试 | 源代码 |
| 262 | 1.4.4.1.3.5.2 | 导出pdf | manual | 2d | 2017-04-08 A | 2017-04-10 A | 100% |  |  | 陈江 | 16h | 16h | 编码与单元测试 | 源代码 |
| 263 | 1.4.4.1.3.5.3 | 导出html | manual | 3d | 2017-04-11 A | 2017-04-13 A | 100% |  |  | 陈江 | 24h | 24h | 编码与单元测试 | 源代码 |
| 264 | 1.4.4.1.3.6 | **设计器开发** |  | 16.88d | 2017-04-06 A | 2017-04-28 | 41% | 9.97d | 0d |  | 312h | 108h | 编码与单元测试 | 源代码 |
| 265 | 1.4.4.1.3.6.1 | 在线预览 | manual | 2d | 2017-04-18 A | 2017-04-19 A | 100% |  |  | 张水江 | 16h | 16h | 编码与单元测试 | 源代码 |
| 266 | 1.4.4.1.3.6.2 | 画布截图 | manual | 2d | 2017-04-25 | 2017-04-26 |  |  |  | 吕腾飞 | 16h |  | 编码与单元测试 | 源代码 |
| 267 | 1.4.4.1.3.6.3 | 样式调整 | manual | 3d | 2017-04-20 | 2017-04-22 |  |  |  | 张水江 | 24h |  | 编码与单元测试 | 源代码 |
| 268 | 1.4.4.1.3.6.4 | **图表初始化** |  | 6.88d | 2017-04-06 A | 2017-04-15 A | 100% |  |  |  | 72h | 72h | 编码与单元测试 | 源代码 |
| 269 | 1.4.4.1.3.6.4.1 | 常规图表option组装与初始化 | manual | 3d | 2017-04-06 A | 2017-04-08 A | 100% |  |  | 潘海洋 | 24h | 24h | 编码与单元测试 | 源代码 |
| 270 | 1.4.4.1.3.6.4.2 | 关系图表option组装与初始化 | manual | 3d | 2017-04-10 A | 2017-04-12 A | 100% |  |  | 潘海洋 | 24h | 24h | 编码与单元测试 | 源代码 |
| 271 | 1.4.4.1.3.6.4.3 | gis图表option组装与初始化 | manual | 3d | 2017-04-13 A | 2017-04-15 A | 100% |  |  | 潘海洋 | 24h | 24h | 编码与单元测试 | 源代码 |
| 272 | 1.4.4.1.3.6.5 | 筛选联动 | manual | 3d | 2017-04-17 A | 2017-04-19 | 50% | 1.5d |  | 潘海洋 | 24h | 12h | 编码与单元测试 | 源代码 |
| 273 | 1.4.4.1.3.6.6 | 文字组件初始化 | manual | 2d | 2017-04-14 | 2017-04-15 |  |  |  | 陈江 | 16h |  | 编码与单元测试 | 源代码 |
| 274 | 1.4.4.1.3.6.7 | 图片组件上传与初始化 | manual | 3d | 2017-04-17 | 2017-04-19 |  |  |  | 陈江 | 24h |  | 编码与单元测试 | 源代码 |
| 275 | 1.4.4.1.3.6.8 | 二维码分享 | manual | 1d | 2017-04-20 A | 2017-04-20 A | 100% |  |  | 潘海洋 | 8h | 8h | 编码与单元测试 | 源代码 |
| 276 | 1.4.4.1.3.6.9 | 前置功能调优 | manual | 6d | 2017-04-21 | 2017-04-28 |  |  |  | 潘海洋; 陈江 | 96h |  | 编码与单元测试 | 源代码 |
| 277 | 1.4.4.1.3.6.10 | 数据编辑界面开发 | manual | 2d | 2017-04-24 | 2017-04-25 |  |  |  | 张水江 | 16h |  | 编码与单元测试 | 源代码 |

Notes:
- 259: 工作延时
- 263: 工作延时
- 273: 工作延时

| ID | WBS | Task | Type | Duration | Start | Finish | Complete | Remaining | Total slack | Resources | Work | Actual work | 任务类型 | 工作成果 |
| --- | --- | --- | --- | --- | --- | --- | --- | --- | --- | --- | --- | --- | --- | --- |
| 278 | 1.4.4.1.3.7 | **报表订阅** |  | 2.88d | 2017-04-20 A | 2017-04-24 A | 100% |  |  |  | 32h | 32h | 编码与单元测试 | 源代码 |
| 279 | 1.4.4.1.3.7.1 | 订阅管理 | manual | 2d | 2017-04-20 A | 2017-04-21 A | 100% |  |  | 陈江 | 16h | 16h | 编码与单元测试 | 源代码 |
| 280 | 1.4.4.1.3.7.2 | 邮件发送 | manual | 2d | 2017-04-22 A | 2017-04-24 A | 100% |  |  | 陈江 | 16h | 16h | 编码与单元测试 | 源代码 |
| 281 | 1.4.4.1.3.8 | **度量和维度** |  | 3.88d | 2017-04-25 A | 2017-04-28 | 60% | 1.55d | 0d |  | 32h | 19.2h | 编码与单元测试 | 源代码 |
| 282 | 1.4.4.1.3.8.1 | 数据编辑界面初始化 | manual | 2d | 2017-04-25 A | 2017-04-26 A | 100% |  |  | 陈江 | 16h | 16h | 编码与单元测试 | 源代码 |
| 283 | 1.4.4.1.3.8.2 | 重加载图表 | manual | 2d | 2017-04-27 A | 2017-04-28 | 20% | 1.6d |  | 陈江 | 16h | 3.2h | 编码与单元测试 | 源代码 |
| 284 | 1.4.4.1.4 | **智慧商业应用子系统** |  | 26.88d | 2017-04-13 A | 2017-05-20 | 9% | 24.49d | 0d | 陆剑飞 | 1618h | 118.53h |  |  |
| 285 | 1.4.4.1.4.1 | **客户画像** |  | 10d | 2017-04-13 A | 2017-04-27 | 18% | 8.17d |  | 陆剑飞 | 368h | 52.8h |  | 源代码 |
| 286 | 1.4.4.1.4.1.1 | 客群画像-店铺客群画像 | manual | 3d | 2017-04-13 A | 2017-04-17 | 55% | 1.35d |  | 孙浙君; 陆剑飞 | 48h | 26.4h | 编码与单元测试 | 源代码 |
| 287 | 1.4.4.1.4.1.2 | 客群画像-业态客群画像 | manual | 3d | 2017-04-13 A | 2017-04-17 | 55% | 1.35d |  | 金青青; 王琨 | 48h | 26.4h | 编码与单元测试 | 源代码 |
| 288 | 1.4.4.1.4.1.3 | 客群画像-商场客群画像 | manual | 2d | 2017-04-18 | 2017-04-20 |  |  |  | 孙浙君; 陆剑飞 | 32h |  | 编码与单元测试 | 源代码 |
| 289 | 1.4.4.1.4.1.4 | 客群画像-数据对比分析 | manual | 2d | 2017-04-18 | 2017-04-20 |  |  |  | 金青青; 王琨 | 32h |  | 编码与单元测试 | 源代码 |
| 290 | 1.4.4.1.4.1.5 | 个体画像-用户筛选 | manual | 2d | 2017-04-21 | 2017-04-22 |  |  |  | 孙浙君; 陆剑飞 | 32h |  | 编码与单元测试 | 源代码 |
| 291 | 1.4.4.1.4.1.6 | 个体画像-个体精准画像 | manual | 2d | 2017-04-21 | 2017-04-22 |  |  |  | 金青青; 王琨 | 32h |  | 编码与单元测试 | 源代码 |
| 292 | 1.4.4.1.4.1.7 | 客户分类 | manual | 2d | 2017-04-24 | 2017-04-25 |  |  |  | 孙浙君; 陆剑飞 | 32h |  | 编码与单元测试 | 源代码 |
| 293 | 1.4.4.1.4.1.8 | 标签管理 | manual | 2d | 2017-04-24 | 2017-04-25 |  |  |  | 金青青; 王琨 | 32h |  | 编码与单元测试 | 源代码 |
| 294 | 1.4.4.1.4.2 | **业态分析** |  | 18.88d | 2017-04-13 A | 2017-05-09 | 15% | 16.04d | 0d | 黄博 | 311h | 46.65h |  | 源代码 |
| 295 | 1.4.4.1.4.2.1 | 业态分析-业态基本信息 | manual | 3d | 2017-04-13 A | 2017-04-15 A | 100% |  |  | 黄博 | 24h | 24h | 编码与单元测试 | 源代码 |
| 296 | 1.4.4.1.4.2.2 | 业态分析-业态租金分析 | manual | 2d | 2017-04-17 | 2017-04-18 |  |  |  | 黄博 | 16h |  | 编码与单元测试 | 源代码 |
| 297 | 1.4.4.1.4.2.3 | 业态分析-销售关联分析 | manual | 2d | 2017-04-19 | 2017-04-20 |  |  |  | 黄博 | 16h |  | 编码与单元测试 | 源代码 |
| 298 | 1.4.4.1.4.2.4 | 业态分析-业态客流分析 | manual | 2d | 2017-04-21 | 2017-04-22 |  |  |  | 黄博 | 16h |  | 编码与单元测试 | 源代码 |
| 299 | 1.4.4.1.4.2.5 | 业态分析-业态销售分析 | manual | 2d | 2017-04-24 | 2017-04-25 |  |  |  | 黄博 | 16h |  | 编码与单元测试 | 源代码 |
| 300 | 1.4.4.1.4.2.6 | 店铺分析-店铺销售排行 | manual | 1d | 2017-04-26 | 2017-04-27 |  |  |  | 黄博 | 8h |  | 编码与单元测试 | 源代码 |
| 301 | 1.4.4.1.4.2.7 | 店铺分析-店铺销售分析 | manual | 3d | 2017-04-28 | 2017-05-02 |  |  |  | 黄博 | 24h |  | 编码与单元测试 | 源代码 |
| 302 | 1.4.4.1.4.2.8 | 店铺分析-店铺对比分析 | manual | 1d | 2017-05-03 | 2017-05-04 |  |  |  | 黄博 | 8h |  | 编码与单元测试 | 源代码 |
| 303 | 1.4.4.1.4.2.9 | 店铺分析-店铺客流分析 | manual | 2d | 2017-05-05 | 2017-05-06 |  |  |  | 黄博 | 16h |  | 编码与单元测试 | 源代码 |
| 304 | 1.4.4.1.4.2.10 | 关联分析 | manual | 2d | 2017-05-08 | 2017-05-09 |  |  |  | 黄博 | 16h |  | 编码与单元测试 | 源代码 |

Notes:
- 286: 工作延时
- 287: 工作延时

| ID | WBS | Task | Type | Duration | Start | Finish | Total slack | Resources | Work | 工作成果 | 任务类型 |
| --- | --- | --- | --- | --- | --- | --- | --- | --- | --- | --- | --- |
| 305 | 1.4.4.1.4.3 | **精准营销** |  | 7.88d | 2017-04-28 | 2017-05-09 | 0d | 王琨 | 135h | 源代码 |  |
| 306 | 1.4.4.1.4.3.1 | 客户关怀 | manual | 4d | 2017-04-28 | 2017-05-03 |  | 王琨 | 32h | 源代码 | 编码与单元测试 |
| 307 | 1.4.4.1.4.3.2 | 精准广告 | manual | 3d | 2017-05-04 | 2017-05-06 |  | 王琨 | 24h | 源代码 | 编码与单元测试 |
| 308 | 1.4.4.1.4.3.3 | 素材库 | manual | 2d | 2017-05-08 | 2017-05-09 |  | 王琨 | 16h | 源代码 | 编码与单元测试 |
| 309 | 1.4.4.1.4.4 | **推广效果评估** |  | 6.88d | 2017-04-13 | 2017-04-22 | 0d | 梁壮 | 127h | 源代码 |  |
| 310 | 1.4.4.1.4.4.1 | 推广活动设置 | manual | 3d | 2017-04-13 | 2017-04-15 |  | 梁壮 | 24h | 源代码 | 编码与单元测试 |
| 311 | 1.4.4.1.4.4.2 | 推广效果评估 | manual | 3d | 2017-04-17 | 2017-04-19 |  | 梁壮 | 24h | 源代码 | 编码与单元测试 |
| 312 | 1.4.4.1.4.4.3 | 活动对比分析 | manual | 3d | 2017-04-20 | 2017-04-22 |  | 梁壮 | 24h | 源代码 | 编码与单元测试 |
| 313 | 1.4.4.1.4.5 | **运营监控** |  | 13.88d | 2017-05-02 | 2017-05-20 | 0d | 潘海洋; 吕腾飞 | 462h | 源代码 |  |
| 314 | 1.4.4.1.4.5.1 | 全产业运营监控 | manual | 3d | 2017-05-02 | 2017-05-04 |  | 潘海洋; 孙浙君 | 48h | 源代码 | 编码与单元测试 |
| 315 | 1.4.4.1.4.5.2 | 商场运营监控 | manual | 2d | 2017-05-05 | 2017-05-08 |  | 潘海洋; 孙浙君 | 32h | 源代码 | 编码与单元测试 |
| 316 | 1.4.4.1.4.5.3 | 酒店运营监控 | manual | 2d | 2017-05-09 | 2017-05-10 |  | 潘海洋; 孙浙君 | 32h | 源代码 | 编码与单元测试 |
| 317 | 1.4.4.1.4.5.4 | 剧院运营监控 | manual | 1d | 2017-05-11 | 2017-05-12 |  | 潘海洋; 孙浙君 | 16h | 源代码 | 编码与单元测试 |
| 318 | 1.4.4.1.4.5.5 | 客流路径分析 | manual | 4d | 2017-05-13 | 2017-05-17 |  | 潘海洋; 孙浙君 | 64h | 源代码 | 编码与单元测试 |
| 319 | 1.4.4.1.4.5.6 | 指标设置 | manual | 3d | 2017-05-18 | 2017-05-20 |  | 潘海洋; 孙浙君 | 48h | 源代码 | 编码与单元测试 |
| 320 | 1.4.4.1.5 | 移动可视化子系统 | manual | 5d | 2017-05-05 | 2017-05-12 |  | 孙浙君; 何平 | 80h | 源代码 | 编码与单元测试 |
| 321 | 1.4.4.1.6 | **数据分析挖掘子系统** |  | 26d | 2017-04-10 | 2017-05-15 |  | 屈鹏飞; 谢立英 | 496h |  |  |
| 322 | 1.4.4.1.6.1 | 算法实现(文档出来后再细分) | manual | 5d | 2017-04-10 | 2017-04-14 |  | 罗艳清; 谢立英 | 80h | 源代码 | 编码与单元测试 |
| 323 | 1.4.4.1.7 | **门户平台** |  | 11.88d | 2017-05-05 | 2017-05-22 | 0d | 郑开丽 | 191h |  |  |
| 324 | 1.4.4.1.7.1 | 门户主页设计与实现 | manual | 3d | 2017-05-05 | 2017-05-09 |  | 郑开丽 | 24h | 源代码 | 编码与单元测试 |
| 325 | 1.4.4.1.7.2 | 单点登录实现 | manual | 2d | 2017-05-10 | 2017-05-12 |  | 郑开丽 | 16h | 源代码 | 编码与单元测试 |
| 326 | 1.4.4.1.7.3 | 子系统改造（各个子系统自己集成） | manual | 3d | 2017-05-13 | 2017-05-16 |  | 郑开丽 | 24h | 源代码 | 编码与单元测试 |
| 327 | 1.4.4.1.7.4 | 子系统集成 | manual | 2d | 2017-05-17 | 2017-05-18 |  | 郑开丽 | 16h | 源代码 | 编码与单元测试 |
| 328 | 1.4.4.1.7.5 | license控制开发（机器码、在线数OR总用户数） | manual | 2d | 2017-05-19 | 2017-05-22 |  | 郑开丽 | 16h | 源代码 | 编码与单元测试 |
| 329 | 1.4.4.2 | 需求跟踪 | manual | 2d | 2017-04-07 | 2017-04-08 |  |  |  | 问题记录与跟踪表 | 项目管理 |
| 330 | 1.4.4.3 | 代码评审、代码审核 | manual | 15d | 2017-04-07 | 2017-04-27 |  |  |  |  |  |

Notes:
- 310: 工作延时

| ID | WBS | Task | Type | Duration | Start | Finish | Total slack | Free slack | Constraint | Resources | Work | 任务类型 | 工作成果 |
| --- | --- | --- | --- | --- | --- | --- | --- | --- | --- | --- | --- | --- | --- |
| 331 | 1.4.5 | **系统测试** |  | 95d | 2017-03-01 | 2017-07-12 | -6d | 0d |  |  | 8992h |  |  |
| 332 | 1.4.5.1 | 集成环境准备 |  | 68d | 2017-04-07 | 2017-07-12 | -7.12d | 0d | finish no earlier than 2017-06-05 | 俞周宏 | 544h |  |  |
| 333 | 1.4.5.2 | **数据资产管理子系统测试** |  | 87.88d | 2017-03-01 | 2017-06-30 | 0d |  |  |  | 4224h |  |  |
| 334 | 1.4.5.2.1 | 执行系统测试 | manual | 88d | 2017-03-01 | 2017-06-30 |  |  |  | 俞周宏; 何秀莲 | 1408h | 执行系统测试 | 问题记录与跟踪表 |
| 335 | 1.4.5.2.2 | 测试问题修订 | manual | 88d | 2017-03-01 | 2017-06-30 |  |  |  | 俞周宏; 何秀莲 | 1408h | 返工 |  |
| 336 | 1.4.5.2.3 | 测试问题回测 | manual | 88d | 2017-03-01 | 2017-06-30 |  |  |  | 俞周宏; 何秀莲 | 1408h | 执行系统测试 |  |
| 337 | 1.4.5.3 | **智能分析子系统测试** |  | 13.88d | 2017-05-02 | 2017-05-20 | 0d |  |  |  | 720h |  |  |
| 338 | 1.4.5.3.1 | 执行系统测试 | manual | 15d | 2017-05-02 | 2017-05-20 |  |  |  | 何秀莲; 项目组自测 | 240h | 执行系统测试 | 问题记录与跟踪表 |
| 339 | 1.4.5.3.2 | 测试问题修订 | manual | 15d | 2017-05-02 | 2017-05-20 |  |  |  | 何秀莲; 项目组自测 | 240h | 返工 |  |
| 340 | 1.4.5.3.3 | 测试问题回测 | manual | 15d | 2017-05-02 | 2017-05-20 |  |  |  | 何秀莲; 项目组自测 | 240h | 执行系统测试 |  |
| 341 | 1.4.5.4 | **大数据可视化子系统测试** |  | 13.88d | 2017-05-02 | 2017-05-20 | 0d |  |  |  | 704h |  |  |
| 342 | 1.4.5.4.1 | 执行系统测试 | manual | 14d | 2017-05-02 | 2017-05-20 |  |  |  | 何秀莲; 项目组自测 | 224h | 执行系统测试 | 问题记录与跟踪表 |
| 343 | 1.4.5.4.2 | 测试问题修订 | manual | 15d | 2017-05-02 | 2017-05-20 |  |  |  | 何秀莲; 项目组自测 | 240h | 返工 |  |
| 344 | 1.4.5.4.3 | 测试问题回测 | manual | 15d | 2017-05-02 | 2017-05-20 |  |  |  | 何秀莲; 项目组自测 | 240h | 执行系统测试 |  |
| 345 | 1.4.5.5 | **智慧商业应用子系统测试** |  | 11.88d | 2017-05-25 | 2017-06-10 | 0d |  |  |  | 624h |  |  |
| 346 | 1.4.5.5.1 | 执行系统测试 | manual | 13d | 2017-05-25 | 2017-06-10 |  |  |  | 何秀莲; 项目组自测 | 208h | 执行系统测试 | 问题记录与跟踪表 |
| 347 | 1.4.5.5.2 | 测试问题修订 | manual | 13d | 2017-05-25 | 2017-06-10 |  |  |  | 何秀莲; 项目组自测 | 208h | 返工 |  |
| 348 | 1.4.5.5.3 | 测试问题回测 | manual | 13d | 2017-05-25 | 2017-06-10 |  |  |  | 何秀莲; 项目组自测 | 208h | 执行系统测试 |  |
| 349 | 1.4.5.6 | **移动可视化子系统** |  | 4.88d | 2017-05-25 | 2017-05-31 | 0d |  |  |  | 240h |  |  |
| 350 | 1.4.5.6.1 | 执行系统测试 | manual | 5d | 2017-05-25 | 2017-05-31 |  |  |  | 何秀莲; 项目组自测 | 80h | 执行系统测试 | 问题记录与跟踪表 |
| 351 | 1.4.5.6.2 | 测试问题修订 | manual | 5d | 2017-05-25 | 2017-05-31 |  |  |  | 何秀莲; 项目组自测 | 80h | 返工 |  |
| 352 | 1.4.5.6.3 | 测试问题回测 | manual | 5d | 2017-05-25 | 2017-05-31 |  |  |  | 何秀莲; 项目组自测 | 80h | 执行系统测试 |  |
| 353 | 1.4.5.7 | **数据仓库子系统** |  | 1d | 2017-04-07 | 2017-04-10 | 0d |  |  |  |  |  |  |
| 354 | 1.4.5.7.1 | 执行系统测试 | manual | 1d | 2017-04-07 | 2017-04-10 |  |  |  |  |  | 执行系统测试 | 问题记录与跟踪表 |
| 355 | 1.4.5.7.2 | 测试问题修订 | manual | 1d | 2017-04-07 | 2017-04-10 |  |  |  |  |  | 返工 |  |
| 356 | 1.4.5.7.3 | 测试问题回测 | manual | 1d | 2017-04-07 | 2017-04-10 |  |  |  |  |  | 执行系统测试 |  |

| ID | WBS | Task | Type | Duration | Start | Finish | Total slack | Resources | Work | 任务类型 | 工作成果 |
| --- | --- | --- | --- | --- | --- | --- | --- | --- | --- | --- | --- |
| 357 | 1.4.5.8 | **门户平台** |  | 7.88d | 2017-05-22 | 2017-05-31 | 0d |  | 384h |  |  |
| 358 | 1.4.5.8.1 | 执行系统测试 | manual | 8d | 2017-05-22 | 2017-05-31 |  | 何秀莲; 项目组自测 | 128h | 执行系统测试 | 问题记录与跟踪表 |
| 359 | 1.4.5.8.2 | 测试问题修订 | manual | 8d | 2017-05-22 | 2017-05-31 |  | 何秀莲; 项目组自测 | 128h | 返工 |  |
| 360 | 1.4.5.8.3 | 测试问题回测 | manual | 8d | 2017-05-22 | 2017-05-31 |  | 何秀莲; 项目组自测 | 128h | 执行系统测试 |  |
| 361 | 1.4.5.9 | **整体性测试** |  | 29.88d | 2017-05-22 | 2017-06-30 | 0d |  | 1440h |  |  |
| 362 | 1.4.5.9.1 | 执行系统测试 | manual | 30d | 2017-05-22 | 2017-06-30 |  | 何秀莲; 项目组自测 | 480h | 执行系统测试 | 问题记录与跟踪表 |
| 363 | 1.4.5.9.2 | 测试问题修订 | manual | 30d | 2017-05-22 | 2017-06-30 |  | 何秀莲; 项目组自测 | 480h | 返工 |  |
| 364 | 1.4.5.9.3 | 测试问题回测 | manual | 30d | 2017-05-22 | 2017-06-30 |  | 何秀莲; 项目组自测 | 480h | 执行系统测试 |  |
| 365 | 1.4.5.10 | **测试报告** |  | 0.88d | 2017-06-30 | 2017-06-30 | 0d |  | 32h |  |  |
| 366 | 1.4.5.10.1 | 制订系统测试报告 | manual | 1d | 2017-06-30 | 2017-06-30 |  | 何秀莲; 项目组自测 | 16h | 系统测试 | 测试报告 |
| 367 | 1.4.5.10.2 | 系统测试报告的审核与确认 | manual | 1d | 2017-06-30 | 2017-06-30 |  | 何秀莲; 项目组自测 | 16h | 项目管理 |  |
| 368 | 1.4.5.11 | 用户手册 | manual | 10d | 2017-06-20 | 2017-07-04 |  | 何秀莲 | 80h | 项目管理 |  |
| 369 | 1.4.5.12 | 需求跟踪 | manual | 1d | 2017-06-30 | 2017-06-30 |  |  |  | 项目管理 |  |
| 370 | 1.5 | **项目实施** |  | 63d | 2017-06-25 | 2017-09-20 | 0d |  |  |  |  |
| 371 | 1.5.1 | 现场环境确认 | manual | 10d | 2017-06-25 | 2017-07-07 |  |  |  | 项目实施 |  |
| 372 | 1.5.2 | 项目实施文档准备 | manual | 7d | 2017-07-01 | 2017-07-10 |  |  |  | 项目实施 | 实施计划、实施方案、测试方案、验收报告模板 |
| 373 | 1.5.3 | 现场环境准备完成 | manual | 3d | 2017-07-06 | 2017-07-10 |  |  |  | 项目实施 |  |
| 374 | 1.5.4 | 云计算IaaS平台现场部署和调试 | manual | 8d | 2017-07-11 | 2017-07-20 |  |  |  | 项目实施 |  |
| 375 | 1.5.5 | 大数据软件平台现场部署和调试 | manual | 6d | 2017-07-21 | 2017-07-30 |  |  |  | 项目实施 |  |
| 376 | 1.5.6 | 周边系统集成对接 | manual | 23d | 2017-08-02 | 2017-09-04 |  |  |  | 项目实施 |  |
| 377 | 1.5.7 | 数据仓库建设 | manual | 23d | 2017-08-02 | 2017-09-04 |  |  |  | 项目实施 | 数据仓库实施文档 |
| 378 | 1.5.8 | 云计算IaaS平台测试 | manual | 7d | 2017-09-01 | 2017-09-10 |  |  |  | 项目实施 |  |
| 379 | 1.5.9 | 大数据软件平台测试 | manual | 8d | 2017-09-11 | 2017-09-20 |  |  |  | 项目实施 |  |
| 380 | 1.5.10 | 用户培训 | manual | 16d | 2017-08-20 | 2017-09-10 |  |  |  | 项目实施 |  |

| ID | WBS | Task | Type | Duration | Start | Finish | Total slack | 任务类型 | 工作成果 |
| --- | --- | --- | --- | --- | --- | --- | --- | --- | --- |
| 381 | 1.6 | **项目试运行** |  | 67.88d | 2017-09-21 | 2017-12-25 | 0d |  |  |
| 382 | 1.6.1 | 项目初验 | manual | 5d | 2017-09-21 | 2017-09-27 |  | 项目试运行 | 系统初验报告、回款30% |
| 383 | 1.6.2 | 系统试运行 | manual | 68d | 2017-09-21 | 2017-12-25 |  | 项目试运行 |  |
| 384 | 1.6.3 | 软件功能问题跟踪及完善 | manual | 68d | 2017-09-21 | 2017-12-25 |  | 项目试运行 |  |
| 385 | 1.7 | **项目正式上线** |  | 29d | 2017-12-25 | 2018-02-02 |  |  | 回款35% |
| 386 | 1.7.1 | 正式上线 | manual | 25d | 2017-12-25 | 2018-01-26 |  | 项目上线 |  |
| 387 | 1.7.2 | 项目终验 | manual | 5d | 2018-01-29 | 2018-02-02 |  | 项目上线 | 系统终验报告 |
