# 进度计划.mpp

Schedule from MS Project, 2017-02-13 to 2017-04-26, status date 2011-06-02, A marks actual dates.
jdlssoft

## Calendars

- 标准: Mon-Fri 08:00-12:00, 13:00-17:00; Sat-Sun off. Exceptions (off unless hours are given): 2017-02-18 08:00-12:00, 13:00-17:00, 2017-02-25 08:00-12:00, 13:00-17:00, 2017-03-11 08:00-12:00, 13:00-17:00, 2017-04-01 08:00-12:00, 13:00-17:00, 2017-04-22 08:00-12:00, 13:00-17:00.

## Resources

| Resource |
| --- |
| 屠文洋 |
| 潘海洋 |
| 何平 |
| 杨逸群 |
| 陈江 |
| 张水江 |
| 张水江 吕腾飞 |

## Schedule

| ID | WBS | Task | Type | Duration | Start | Finish | Complete | Remaining | Baseline start | Baseline finish | Baseline duration | Total slack | Constraint | Resources | Work | Actual work | Text29 | Text30 | Text1 |
| --- | --- | --- | --- | --- | --- | --- | --- | --- | --- | --- | --- | --- | --- | --- | --- | --- | --- | --- | --- |
| 1 | 1 | **项目启动** |  | 0.25d | 2017-02-13 08:00 A | 2017-02-13 10:00 A | 100% |  |  |  |  |  |  |  | 2h | 2h |  |  |  |
| 2 | 1.1 | 项目启动会 | milestone | 0.25d | 2017-02-13 08:00 A | 2017-02-13 10:00 A | 100% |  |  |  |  |  | start no earlier than 2017-02-13 08:00 |  | 2h | 2h | 项目启动会材料 | 项目管理 |  |
| 3 | 2 | **项目策划** |  | 5d | 2017-02-13 08:00 A | 2017-02-17 17:00 | 81% | 0.94d | 2011-06-08 08:00 | 2011-06-22 17:00 | 13d | 53d |  |  | 64h | 52h |  |  |  |
| 4 | 2.1 | **计划制定** |  | 3d | 2017-02-13 08:00 A | 2017-02-15 17:00 | 50% | 1.5d |  |  |  | 55d |  |  | 24h | 12h |  |  |  |
| 5 | 2.1.1 | 制订项目计划 |  | 3d | 2017-02-13 08:00 A | 2017-02-15 17:00 | 50% | 1.5d | 2011-06-08 08:00 | 2011-06-18 17:00 | 10d | 55d | start no earlier than 2017-02-13 08:00 | 屠文洋 | 24h | 12h | 进度计划、过程审查表、计划与跟踪表 | 项目管理 |  |
| 6 | 2.2 | **计划内审** |  | 2d | 2017-02-16 08:00 A | 2017-02-17 17:00 A | 100% |  |  |  |  |  |  |  | 32h | 32h |  |  |  |
| 7 | 2.2.1 | 项目计划审批 |  | 1d | 2017-02-16 08:00 A | 2017-02-16 17:00 A | 100% |  | 2011-07-04 08:00 | 2011-07-04 17:00 | 1d |  |  | 屠文洋 | 8h | 8h | 计划与跟踪表 | 评审 |  |
| 8 | 2.2.2 | 项目计划修订 |  | 1d | 2017-02-16 08:00 A | 2017-02-16 17:00 A | 100% |  | 2011-07-05 08:00 | 2011-07-05 17:00 | 1d |  |  | 屠文洋 | 8h | 8h | 进度计划 | 返工 |  |
| 9 | 2.2.3 | 项目计划问题验证 |  | 2d | 2017-02-16 08:00 A | 2017-02-17 17:00 A | 100% |  |  |  |  |  |  | 屠文洋 | 16h | 16h | 进度计划、计划与跟踪表 | 评审 |  |
| 10 | 2.3 | 项目估算 |  | 1d | 2017-02-17 08:00 A | 2017-02-17 17:00 A | 100% |  | 2011-07-11 08:00 | 2011-07-11 17:00 | 1d |  |  | 屠文洋 | 8h | 8h | 估算过程表 | 项目管理 |  |
| 11 | 3 | **需求分析** |  | 27d? | 2017-02-15 08:00 A | 2017-03-20 17:00 | 27% | 19.77d? | 2011-04-19 08:00 | 2011-07-21 17:00 | 71d | 29d |  |  | 316h | 132h |  |  |  |
| 12 | 3.1 | **功能需求分析** |  | 4d? | 2017-02-15 08:00 A | 2017-02-18 17:00 | 53% | 1.88d? | 2011-06-08 08:00 | 2011-06-29 17:00 | 19d | 52d |  |  | 136h | 72h |  |  |  |
| 13 | 3.1.1 | **大数据可视化子系统** |  | 4d? | 2017-02-15 08:00 A | 2017-02-18 17:00 | 53% | 1.88d? | 2011-06-08 08:00 | 2011-06-24 17:00 | 15d | 52d |  |  | 136h | 72h |  |  |  |
| 14 | 3.1.1.1 | 数据源管理 |  | 0.5d | 2017-02-15 08:00 A | 2017-02-15 12:00 A | 100% |  | 2011-06-08 08:00 | 2011-06-08 12:00 | 0.5d |  | finish no earlier than 2017-02-15 17:00 | 潘海洋; 何平 | 8h | 8h | 需求分析说明书 | 需求分析 |  |
| 15 | 3.1.1.2 | 业务分类 |  | 0.5d | 2017-02-15 08:00 A | 2017-02-15 12:00 A | 100% |  | 2011-06-08 13:00 | 2011-06-08 17:00 | 0.5d |  | finish no earlier than 2017-02-15 17:00 | 潘海洋; 何平 | 8h | 8h | 需求分析说明书 | 需求分析 |  |
| 16 | 3.1.1.3 | 模版管理 |  | 1d | 2017-02-15 08:00 A | 2017-02-15 17:00 A | 100% |  | 2011-06-09 08:00 | 2011-06-09 17:00 | 1d |  |  | 潘海洋; 何平 | 16h | 16h | 需求分析说明书 | 需求分析 |  |
| 17 | 3.1.1.4 | 可视化设计 |  | 3d | 2017-02-16 08:00 A | 2017-02-18 17:00 | 17% | 2.5d | 2011-06-10 08:00 | 2011-06-10 12:00 | 0.5d | 52d | finish no earlier than 2017-02-18 17:00 | 潘海洋; 何平 | 48h | 8h | 需求分析说明书 | 需求分析 |  |
| 18 | 3.1.1.5 | 目录管理 |  | 0.5d | 2017-02-16 08:00 A | 2017-02-16 12:00 A | 100% |  | 2011-06-10 13:00 | 2011-06-10 17:00 | 0.5d |  |  | 潘海洋; 何平 | 8h | 8h | 需求分析说明书 | 需求分析 |  |
| 19 | 3.1.1.6 | 报表主题设计 |  | 1.5d | 2017-02-16 08:00 A | 2017-02-17 17:00 | 33% | 1d | 2011-06-11 08:00 | 2011-06-11 12:00 | 0.5d | 53d | finish no earlier than 2017-02-17 17:00 | 潘海洋; 何平 | 24h | 8h | 需求分析说明书 | 需求分析 |  |
| 20 | 3.1.1.7 | 订阅管理 |  | 0.5d | 2017-02-18 08:00 A | 2017-02-18 12:00 A | 100% |  | 2011-06-11 13:00 | 2011-06-13 12:00 | 1d |  |  | 潘海洋; 何平 | 8h | 8h | 需求分析说明书 | 需求分析 |  |
| 21 | 3.1.1.8 | 度量和维度管理 |  | 0.5d? | 2017-02-18 08:00 | 2017-02-18 12:00 |  |  |  |  |  | 52.5d | start no earlier than 2017-02-18 08:00 | 潘海洋; 何平 | 8h |  | 需求分析说明书 | 需求分析 |  |
| 22 | 3.1.1.9 | 权限管理 |  | 0.5d | 2017-02-18 08:00 A | 2017-02-18 12:00 A | 100% |  | 2011-06-13 13:00 | 2011-06-13 17:00 | 0.5d |  |  | 潘海洋; 何平 | 8h | 8h | 需求分析说明书 | 需求分析 |  |
| 23 | 3.2 | **界面原型** |  | 26d? | 2017-02-16 08:00 A | 2017-03-20 17:00 | 20% | 20.92d? | 2011-06-30 08:00 | 2011-07-08 17:00 | 7d | 29d |  |  | 180h | 60h |  |  | 技术评审报告、评审问题跟踪表 |
| 24 | 3.2.1 | **界面原型设计** |  | 8d? | 2017-02-16 08:00 A | 2017-02-25 08:00 | 41% | 4.71d? | 2011-06-20 08:00 | 2011-06-30 17:00 | 10d | 47d |  |  | 68h | 28h |  |  |  |
| 25 | 3.2.1.1 | **大数据可视化子系统** |  | 8d? | 2017-02-16 08:00 A | 2017-02-25 08:00 | 41% | 4.71d? | 2011-06-08 08:00 | 2011-06-24 17:00 | 15d | 47d |  |  | 68h | 28h |  |  |  |
| 26 | 3.2.1.1.1 | 数据源管理 |  | 0.5d | 2017-02-16 08:00 A | 2017-02-16 12:00 A | 100% |  | 2011-06-08 08:00 | 2011-06-08 12:00 | 0.5d |  | finish no earlier than 2017-02-16 17:00 | 杨逸群 | 4h | 4h | 原型界面 | 原型界面 |  |
| 27 | 3.2.1.1.2 | 业务分类 |  | 0.5d | 2017-02-16 08:00 A | 2017-02-16 12:00 A | 100% |  | 2011-06-08 13:00 | 2011-06-08 17:00 | 0.5d |  | finish no earlier than 2017-02-16 17:00 | 杨逸群 | 4h | 4h | 原型界面 | 原型界面 |  |
| 28 | 3.2.1.1.3 | 模版管理 |  | 0.5d | 2017-02-17 08:00 A | 2017-02-17 12:00 A | 100% |  | 2011-06-09 08:00 | 2011-06-09 17:00 | 1d |  |  | 杨逸群 | 4h | 4h | 原型界面 | 原型界面 |  |
| 29 | 3.2.1.1.4 | 可视化设计 |  | 5d | 2017-02-17 08:00 A | 2017-02-22 17:00 | 10% | 4.5d | 2011-06-10 08:00 | 2011-06-10 12:00 | 0.5d | 49d | finish no earlier than 2017-02-22 17:00 | 杨逸群 | 40h | 4h | 原型界面 | 原型界面 |  |
| 30 | 3.2.1.1.5 | 目录管理 |  | 0.5d | 2017-02-23 08:00 A | 2017-02-23 12:00 A | 100% |  | 2011-06-10 13:00 | 2011-06-10 17:00 | 0.5d |  | finish no earlier than 2017-02-23 17:00 | 杨逸群 | 4h | 4h | 原型界面 | 原型界面 |  |
| 31 | 3.2.1.1.6 | 报表主题设计 |  | 0.5d | 2017-02-23 08:00 A | 2017-02-23 12:00 A | 100% |  | 2011-06-11 08:00 | 2011-06-11 12:00 | 0.5d |  | finish no earlier than 2017-02-23 17:00 | 杨逸群 | 4h | 4h | 原型界面 | 原型界面 |  |
| 32 | 3.2.1.1.7 | 订阅管理 |  | 0.5d | 2017-02-24 08:00 A | 2017-02-24 12:00 A | 100% |  | 2011-06-11 13:00 | 2011-06-13 12:00 | 1d |  |  | 杨逸群 | 4h | 4h | 原型界面 | 原型界面 |  |
| 33 | 3.2.1.1.8 | 度量和维度管理 |  | 0.5d? | 2017-02-24 13:00 | 2017-02-24 17:00 |  |  |  |  |  | 47d | finish no earlier than 2017-02-24 17:00 | 杨逸群 | 4h |  | 原型界面 | 原型界面 |  |
| 34 | 3.2.1.1.9 | 权限管理 | milestone | 0d | 2017-02-25 08:00 A |  | 100% | 0d | 2011-06-13 13:00 | 2011-06-13 17:00 | 0.5d | 0d |  | 杨逸群 |  |  | 原型界面 | 原型界面 |  |

| ID | WBS | Task | Duration | Start | Finish | Complete | Remaining | Baseline start | Baseline finish | Baseline duration | Total slack | Constraint | Resources | Work | Actual work | Text29 | Text30 |
| --- | --- | --- | --- | --- | --- | --- | --- | --- | --- | --- | --- | --- | --- | --- | --- | --- | --- |
| 35 | 3.2.2 | **界面原型确认** | 1d | 2017-02-27 08:00 A | 2017-02-27 17:00 A | 100% |  |  |  |  |  |  |  | 32h | 32h |  |  |
| 36 | 3.2.2.1 | 大数据可视化子系统 | 1d | 2017-02-27 08:00 A | 2017-02-27 17:00 A | 100% |  |  |  |  |  |  | 屠文洋; 潘海洋; 何平; 杨逸群 | 32h | 32h | 会议纪要、界面原型 | 评审 |
| 37 | 3.2.3 | **界面原型开发** | 25d | 2017-02-17 08:00 A | 2017-03-20 17:00 | 12% | 22.06d | 2011-06-20 08:00 | 2011-06-30 17:00 | 10d | 29d |  |  | 80h |  |  |  |
| 38 | 3.2.3.1 | **大数据可视化子系统** | 25d | 2017-02-17 08:00 A | 2017-03-20 17:00 | 12% | 22.06d | 2011-06-08 08:00 | 2011-06-24 17:00 | 15d | 29d |  |  | 80h |  |  |  |
| 39 | 3.2.3.1.1 | 数据源管理 | 2d | 2017-02-17 08:00 A | 2017-02-18 17:00 | 25% | 1.5d | 2011-06-08 08:00 | 2011-06-08 12:00 | 0.5d | 52d | finish no earlier than 2017-02-18 17:00 |  |  |  | 原型开发 | 原型开发 |
| 40 | 3.2.3.1.2 | 业务分类 | 0.5d | 2017-02-27 08:00 A | 2017-02-27 12:00 A | 100% |  | 2011-06-08 13:00 | 2011-06-08 17:00 | 0.5d |  |  |  |  |  | 原型开发 | 原型开发 |
| 41 | 3.2.3.1.3 | 模版管理 | 0.5d | 2017-02-27 08:00 A | 2017-02-27 12:00 A | 100% |  | 2011-06-09 08:00 | 2011-06-09 17:00 | 1d |  | finish no earlier than 2017-02-27 17:00 |  |  |  | 原型开发 | 原型开发 |
| 42 | 3.2.3.1.4 | **可视化设计** | 11d | 2017-03-06 08:00 | 2017-03-17 17:00 |  |  | 2011-06-10 08:00 | 2011-06-10 12:00 | 0.5d |  |  |  | 80h |  | 原型开发 | 原型开发 |
| 43 | 3.2.3.1.4.1 | **工作页面** | 3d | 2017-03-06 08:00 | 2017-03-08 17:00 |  |  |  |  |  |  |  |  | 32h |  |  |  |
| 44 | 3.2.3.1.4.1.1 | **静态页面实现** | 3d | 2017-03-06 08:00 | 2017-03-08 17:00 |  |  |  |  |  |  |  |  | 32h |  |  |  |
| 45 | 3.2.3.1.4.1.1.1 | header 功能 左侧侧边栏静态页面实现 | 1d | 2017-03-07 08:00 | 2017-03-07 17:00 |  |  |  |  |  | 39d | start no earlier than 2017-03-07 08:00 | 张水江 | 8h |  |  |  |
| 46 | 3.2.3.1.4.1.1.2 | 画板及右侧各种属性的栏静态页面实现 | 3d | 2017-03-06 08:00 | 2017-03-08 17:00 |  |  |  |  |  | 38d | start no earlier than 2017-03-06 08:00 | 张水江 吕腾飞 | 24h |  |  |  |
| 47 | 3.2.3.1.4.2 | **功能栏功能实现** | 8d | 2017-03-09 08:00 | 2017-03-17 17:00 |  |  |  |  |  |  |  |  | 48h |  |  |  |
| 48 | 3.2.3.1.4.2.1 | 添加文字功能实现及其属性栏 | 2d | 2017-03-09 08:00 | 2017-03-10 17:00 |  |  |  |  |  | 36d |  |  | 16h |  |  |  |
| 49 | 3.2.3.1.4.2.2 | 添加图形及其属性栏 | 2d | 2017-03-09 08:00 | 2017-03-10 17:00 |  |  |  |  |  | 36d |  |  | 16h |  |  |  |
| 50 | 3.2.3.1.4.2.3 | 其他 如时间 添加logo | 2d | 2017-03-09 08:00 | 2017-03-10 17:00 |  |  |  |  |  | 36d |  |  | 16h |  |  |  |
| 51 | 3.2.3.1.4.2.4 | 添加图表及其属性栏 | 7d | 2017-03-10 08:00 | 2017-03-17 17:00 |  |  |  |  |  | 30d | finish no earlier than 2017-03-17 17:00 |  |  |  |  |  |
| 52 | 3.2.3.1.4.2.5 | 图表数据编辑功能实现 | 9d | 2017-03-09 08:00 | 2017-03-20 17:00 |  |  |  |  |  | 29d |  |  |  |  |  |  |
| 53 | 3.2.3.1.5 | 目录管理 | 0.5d | 2017-03-06 08:00 A | 2017-03-06 12:00 A | 100% |  | 2011-06-10 13:00 | 2011-06-10 17:00 | 0.5d |  |  |  |  |  | 原型开发 | 原型开发 |
| 54 | 3.2.3.1.6 | 报表主题设计 | 2d | 2017-03-06 08:00 A | 2017-03-07 17:00 | 25% | 1.5d | 2011-06-11 08:00 | 2011-06-11 12:00 | 0.5d | 39d | finish no earlier than 2017-03-07 17:00 |  |  |  | 原型开发 | 原型开发 |
| 55 | 3.2.3.1.7 | 订阅管理 | 1d | 2017-03-07 08:00 A | 2017-03-07 17:00 | 50% | 0.5d | 2011-06-11 13:00 | 2011-06-13 12:00 | 1d | 39d | finish no earlier than 2017-03-07 17:00 |  |  |  | 原型开发 | 原型开发 |
| 56 | 3.2.3.1.8 | 度量和维度管理 | 0.5d | 2017-03-07 08:00 | 2017-03-07 12:00 |  |  |  |  |  | 39.5d | start no earlier than 2017-03-07 08:00 |  |  |  | 原型开发 | 原型开发 |
| 57 | 3.2.3.1.9 | 权限管理 | 1d | 2017-03-08 08:00 A | 2017-03-08 17:00 A | 100% |  | 2011-06-13 13:00 | 2011-06-13 17:00 | 0.5d |  | finish no earlier than 2017-03-08 17:00 |  |  |  | 原型开发 | 原型开发 |
| 58 | 3.3 | **需求分析评审** | 1d | 2017-02-20 08:00 A | 2017-02-20 17:00 | 50% | 0.5d |  |  |  | 51d |  |  |  |  |  |  |
| 59 | 3.3.1 | **需求分析内审** | 1d | 2017-02-20 08:00 A | 2017-02-20 17:00 | 50% | 0.5d |  |  |  | 51d |  |  |  |  |  |  |
| 60 | 3.3.1.1 | 需求分析内审申请 | 1d | 2017-02-20 08:00 A | 2017-02-20 17:00 | 50% | 0.5d |  |  |  | 51d |  |  |  |  | 需求规格说明书 | 项目管理 |
| 61 | 3.3.1.2 | 需求分析内部评审 | 1d | 2017-02-20 08:00 A | 2017-02-20 17:00 | 50% | 0.5d |  |  |  | 51d |  |  |  |  | 需求规格说明书、问题记录与跟踪表、需求跟踪表 | 评审 |
| 62 | 3.3.1.3 | 需求分析内部评审问题修改 | 1d | 2017-02-20 08:00 A | 2017-02-20 17:00 | 50% | 0.5d |  |  |  | 51d |  |  |  |  | 需求规格说明书、问题记录与跟踪表 | 返工 |
| 63 | 3.3.1.4 | 需求分析内部评审问题验证 | 1d | 2017-02-20 08:00 A | 2017-02-20 17:00 | 50% | 0.5d |  |  |  | 51d |  |  |  |  | 需求规格说明书、问题记录与跟踪表 | 评审 |
| 64 | 4 | 里程碑评审（需求分析评审通过） | 1d | 2017-02-21 08:00 | 2017-02-21 17:00 |  |  | 2011-07-21 08:00 | 2011-07-21 17:00 | 1d | 50d | start no earlier than 2017-02-21 08:00 |  |  |  | 里程碑报告 | 评审 |

| ID | WBS | Task | Duration | Start | Finish | Complete | Remaining | Baseline start | Baseline finish | Baseline duration | Total slack | Constraint | Text29 | Text30 |
| --- | --- | --- | --- | --- | --- | --- | --- | --- | --- | --- | --- | --- | --- | --- |
| 65 | 5 | **系统测试准备** | 17.5d | 2017-02-21 08:00 A | 2017-03-14 12:00 | 56% | 7.78d |  |  |  | 33.5d |  |  |  |
| 66 | 5.1 | **测试计划** | 1.5d | 2017-02-21 08:00 A | 2017-02-22 12:00 | 60% | 0.6d |  |  |  | 49.5d |  |  |  |
| 67 | 5.1.1 | 制订系统测试计划 | 1d | 2017-02-21 08:00 A | 2017-02-21 17:00 A | 100% |  |  |  |  |  | finish no earlier than 2017-02-21 17:00 | 系统测试计划 | 系统测试 |
| 68 | 5.1.2 | 系统测试计划的审核 | 0.5d | 2017-02-22 08:00 A | 2017-02-22 12:00 A | 100% |  |  |  |  |  | finish no earlier than 2017-02-22 17:00 | 问题记录与跟踪表 | 评审 |
| 69 | 5.1.3 | 系统测试计划的修订 | 0.5d | 2017-02-22 08:00 | 2017-02-22 12:00 |  |  |  |  |  | 49.5d | start no earlier than 2017-02-22 08:00 | 系统测试计划 | 返工 |
| 70 | 5.1.4 | 系统测试计划的问题验证 | 0.5d | 2017-02-22 08:00 | 2017-02-22 12:00 |  |  |  |  |  | 49.5d | start no earlier than 2017-02-22 08:00 | 系统测试计划、问题记录与跟踪表 | 评审 |
| 71 | 5.2 | **测试用例** | 15.5d | 2017-02-23 08:00 A | 2017-03-14 12:00 | 55% | 7d |  |  |  | 33.5d |  |  |  |
| 72 | 5.2.1 | **制订系统测试用例** | 14.5d | 2017-02-23 08:00 A | 2017-03-13 12:00 | 50% | 7.25d |  |  |  | 34.5d |  |  |  |
| 73 | 5.2.1.1 | **大数据可视化子系统** | 13d | 2017-02-23 08:00 A | 2017-03-10 17:00 | 42% | 7.58d | 2011-06-08 08:00 | 2011-06-24 17:00 | 15d | 36d |  |  |  |
| 74 | 5.2.1.1.1 | 数据源管理 | 1d | 2017-02-23 08:00 A | 2017-02-23 17:00 | 50% | 0.5d | 2011-06-08 08:00 | 2011-06-08 12:00 | 0.5d | 48d | start no earlier than 2011-06-08 08:00 | 测试需求 | 测试需求 |
| 75 | 5.2.1.1.2 | 业务分类 | 0.5d | 2017-02-24 08:00 A | 2017-02-24 12:00 A | 100% |  | 2011-06-08 13:00 | 2011-06-08 17:00 | 0.5d |  |  | 测试需求 | 测试需求 |
| 76 | 5.2.1.1.3 | 模版管理 | 0.5d | 2017-02-24 08:00 A | 2017-02-24 12:00 A | 100% |  | 2011-06-09 08:00 | 2011-06-09 17:00 | 1d |  | finish no earlier than 2017-02-24 17:00 | 测试需求 | 测试需求 |
| 77 | 5.2.1.1.4 | 可视化设计 | 5d | 2017-02-25 08:00 A | 2017-03-03 17:00 | 10% | 4.5d | 2011-06-10 08:00 | 2011-06-10 12:00 | 0.5d | 41d | finish no earlier than 2017-03-03 17:00 | 测试需求 | 测试需求 |
| 78 | 5.2.1.1.5 | 目录管理 | 0.5d | 2017-03-06 08:00 A | 2017-03-06 12:00 A | 100% |  | 2011-06-10 13:00 | 2011-06-10 17:00 | 0.5d |  |  | 测试需求 | 测试需求 |
| 79 | 5.2.1.1.6 | 报表主题设计 | 1.5d | 2017-03-06 08:00 A | 2017-03-07 17:00 | 67% | 0.5d | 2011-06-11 08:00 | 2011-06-11 12:00 | 0.5d | 39d | finish no earlier than 2017-03-07 17:00 | 测试需求 | 测试需求 |
| 80 | 5.2.1.1.7 | 订阅管理 | 0.5d | 2017-03-08 08:00 A | 2017-03-08 12:00 A | 100% |  | 2011-06-11 13:00 | 2011-06-13 12:00 | 1d |  | finish no earlier than 2017-03-08 17:00 | 测试需求 | 测试需求 |
| 81 | 5.2.1.1.8 | 度量和维度管理 | 1.5d | 2017-03-08 13:00 | 2017-03-09 17:00 |  |  |  |  |  | 37d | finish no earlier than 2017-03-09 17:00 | 测试需求 | 测试需求 |
| 82 | 5.2.1.1.9 | 权限管理 | 1d | 2017-03-10 08:00 A | 2017-03-10 17:00 A | 100% |  | 2011-06-13 13:00 | 2011-06-13 17:00 | 0.5d |  | finish no earlier than 2017-03-10 17:00 | 测试需求 | 测试需求 |
| 83 | 5.2.1.2 | **非功能测试用例** | 1.5d | 2017-03-11 08:00 A | 2017-03-13 12:00 A | 100% |  |  |  |  |  |  | 测试需求 |  |
| 84 | 5.2.1.2.1 | 性能测试用例 | 0.5d | 2017-03-11 08:00 A | 2017-03-11 12:00 A | 100% |  |  |  |  |  | finish no earlier than 2017-03-11 17:00 | 测试需求 | 系统测试 |
| 85 | 5.2.1.2.2 | 安全性测试用例 | 0.5d | 2017-03-11 08:00 A | 2017-03-11 12:00 A | 100% |  |  |  |  |  | finish no earlier than 2017-03-11 17:00 | 测试需求 | 系统测试 |
| 86 | 5.2.1.2.3 | 稳定性测试用例 | 0.5d | 2017-03-13 08:00 A | 2017-03-13 12:00 A | 100% |  |  |  |  |  | finish no earlier than 2017-03-13 17:00 | 测试需求 | 系统测试 |
| 87 | 5.2.1.2.4 | 易用性测试用例 | 0.5d | 2017-03-13 08:00 A | 2017-03-13 12:00 A | 100% |  |  |  |  |  | finish no earlier than 2017-03-13 17:00 | 测试需求 | 系统测试 |
| 88 | 5.2.2 | **测试用例评审** | 0.5d | 2017-03-14 08:00 A | 2017-03-14 12:00 A | 100% |  |  |  |  |  |  |  |  |
| 89 | 5.2.2.1 | 系统测试用例的审核 | 0.5d | 2017-03-14 08:00 A | 2017-03-14 12:00 A | 100% |  |  |  |  |  | finish no earlier than 2017-03-14 17:00 | 问题记录与跟踪表 | 评审 |
| 90 | 5.2.2.2 | 系统测试用例的修订 | 0.5d | 2017-03-14 08:00 A | 2017-03-14 12:00 A | 100% |  |  |  |  |  | finish no earlier than 2017-03-14 17:00 | 问题记录与跟踪表 | 返工 |
| 91 | 5.2.2.3 | 系统测试用例的问题验证 | 0.5d | 2017-03-14 08:00 A | 2017-03-14 12:00 A | 100% |  |  |  |  |  | finish no earlier than 2017-03-14 17:00 | 系统测试需求、问题记录与跟踪表 | 评审 |

| ID | WBS | Task | Duration | Start | Finish | Predecessors | Complete | Remaining | Baseline start | Baseline finish | Baseline duration | Total slack | Free slack | Constraint | Resources | Work | Actual work | Text29 | Text30 |
| --- | --- | --- | --- | --- | --- | --- | --- | --- | --- | --- | --- | --- | --- | --- | --- | --- | --- | --- | --- |
| 92 | 6 | **概要设计** | 4d | 2017-02-21 08:00 A | 2017-02-24 17:00 |  | 91% | 0.36d |  |  |  | 47d |  |  |  |  |  |  |  |
| 93 | 6.1 | **技术架构设计** | 2d | 2017-02-23 08:00 A | 2017-02-24 17:00 A |  | 100% |  |  |  |  |  |  |  |  |  |  |  |  |
| 94 | 6.1.1 | 关键技术设计 | 2d | 2017-02-23 08:00 A | 2017-02-24 17:00 A |  | 100% |  |  |  |  |  |  | finish no earlier than 2017-02-25 17:00 |  |  |  | 技术架构设计 | 概要设计 |
| 95 | 6.2 | **数据库规划及设计** | 2d | 2017-02-21 08:00 A | 2017-02-22 17:00 A |  | 100% |  |  |  |  |  |  |  |  |  |  |  |  |
| 96 | 6.2.1 | 大数据可视化子系统数据库设计 | 2d | 2017-02-21 08:00 A | 2017-02-22 17:00 A |  | 100% |  |  |  |  |  |  | finish no earlier than 2017-02-22 17:00 |  |  |  | 数据库规划及设计 | 概要设计 |
| 97 | 6.3 | **概要设计评审** | 1d | 2017-02-22 08:00 A | 2017-02-22 17:00 |  | 67% | 0.33d |  |  |  | 49d |  |  |  |  |  |  |  |
| 98 | 6.3.1 | 概要设计内审申请 | 0.5d | 2017-02-22 08:00 A | 2017-02-22 12:00 A |  | 100% |  |  |  |  |  |  | finish no earlier than 2017-03-10 17:00 |  |  |  | 概要设计说明书 | 项目管理 |
| 99 | 6.3.2 | 概要设计内部评审 | 0.5d | 2017-02-22 08:00 A | 2017-02-22 12:00 A |  | 100% |  |  |  |  |  |  | finish no earlier than 2017-03-10 17:00 |  |  |  | 概要设计说明书 | 评审 |
| 100 | 6.3.3 | 概要设计内部评审问题修改及验证 | 0.5d | 2017-02-22 13:00 | 2017-02-22 17:00 |  |  |  |  |  |  | 49d |  | finish no earlier than 2017-02-22 17:00 |  |  |  | 概要设计说明书 | 项目管理 |
| 101 | 7 | **编码与单元测试** | 30d | 2017-02-24 08:00 A | 2017-04-03 17:00 |  | 20% | 24.09d |  |  |  | 18d |  |  |  | 480h | 36h |  |  |
| 102 | 7.1 | 编码前准备 | 1d | 2017-02-24 08:00 A | 2017-02-24 17:00 A |  | 100% |  |  |  |  |  |  | finish no earlier than 2017-02-24 17:00 |  |  |  | 开发环境、编码规范、代码框架等 | 编码与单元测试 |
| 103 | 7.2 | **模块编码实现** | 16d | 2017-02-27 08:00 A | 2017-03-17 17:00 |  | 15% | 13.6d |  |  |  | 30d |  |  |  | 480h | 36h |  |  |
| 104 | 7.2.1 | **大数据可视化子系统** | 16d | 2017-02-27 08:00 A | 2017-03-17 17:00 |  | 15% | 13.6d | 2011-06-08 08:00 | 2011-06-24 17:00 | 15d | 30d |  |  |  | 480h | 36h |  |  |
| 105 | 7.2.1.1 | **数据源管理** | 2d | 2017-03-09 08:00 | 2017-03-10 17:00 |  |  |  | 2011-06-08 08:00 | 2011-06-08 12:00 | 0.5d | 36d |  |  | 何平 | 16h |  | 源代码、readme、单元测试报告 | 编码与单元测试 |
| 106 | 7.2.1.1.1 | 接口源、数仓 | 2d | 2017-03-09 08:00 | 2017-03-10 17:00 |  |  |  |  |  |  | 36d |  | finish no earlier than 2017-03-10 17:00 |  |  |  |  |  |
| 107 | 7.2.1.2 | 业务分类 | 1d | 2017-03-01 08:00 A | 2017-03-01 17:00 |  | 50% | 0.5d | 2011-06-08 13:00 | 2011-06-08 17:00 | 0.5d | 43d |  |  | 何平 | 8h | 4h | 源代码、readme、单元测试报告 | 编码与单元测试 |
| 108 | 7.2.1.3 | **模版管理** | 5d | 2017-03-02 08:00 A | 2017-03-08 17:00 |  |  | 5d | 2011-06-09 08:00 | 2011-06-09 17:00 | 1d |  |  |  | 何平 | 72h | 4h | 源代码、readme、单元测试报告 | 编码与单元测试 |
| 109 | 7.2.1.3.1 | 基础表单界面 | 1d? | 2017-03-03 08:00 | 2017-03-03 17:00 |  |  |  |  |  |  | 38d | 0d | finish no earlier than 2017-03-03 17:00 | 何平 | 8h |  |  |  |
| 110 | 7.2.1.3.2 | 可视化编辑器 | 3d | 2017-03-06 08:00 | 2017-03-08 17:00 | 109 |  |  |  |  |  | 38d |  | start no earlier than 2017-03-06 08:00 | 何平 | 24h |  |  |  |
| 111 | 7.2.1.4 | **可视化设计** | 16d | 2017-02-27 08:00 A | 2017-03-17 17:00 |  |  | 16d | 2011-06-10 08:00 | 2011-06-10 12:00 | 0.5d |  |  |  | 潘海洋 | 220h | 4h | 源代码、readme、单元测试报告 | 编码与单元测试 |
| 112 | 7.2.1.4.1 | 基础表单界面 | 1.5d | 2017-02-27 08:00 | 2017-02-28 12:00 |  |  |  |  |  |  | 44.5d |  | start no earlier than 2017-02-27 08:00 | 潘海洋 | 12h |  |  |  |
| 113 | 7.2.1.4.2 | 视图界面 | 1d? | 2017-03-08 08:00 | 2017-03-08 17:00 |  |  |  |  |  |  | 38d |  | finish no earlier than 2017-03-08 17:00 | 潘海洋 | 8h |  |  |  |
| 114 | 7.2.1.4.3 | URL、二维码分享 | 2d | 2017-03-08 08:00 | 2017-03-09 17:00 |  |  |  |  |  |  | 37d |  | start no earlier than 2017-03-08 08:00 | 陈江 | 16h |  |  |  |
| 115 | 7.2.1.4.4 | 可视化编辑器 | 5d | 2017-03-13 08:00 | 2017-03-17 17:00 |  |  |  |  |  |  | 30d |  | start no earlier than 2017-03-13 08:00 | 潘海洋; 陈江; 何平 [50%] | 40h |  |  |  |
| 116 | 7.2.1.4.5 | 联动设计 | 2d | 2017-03-09 08:00 | 2017-03-10 17:00 |  |  |  |  |  |  | 36d |  | start no earlier than 2017-03-09 08:00 | 潘海洋 | 16h |  |  |  |

| ID | WBS | Task | Duration | Start | Finish | Complete | Baseline start | Baseline finish | Baseline duration | Total slack | Constraint | Resources | Work | Actual work | Text29 | Text30 |
| --- | --- | --- | --- | --- | --- | --- | --- | --- | --- | --- | --- | --- | --- | --- | --- | --- |
| 117 | 7.2.1.5 | **目录管理** | 2d | 2017-03-10 08:00 | 2017-03-11 17:00 |  | 2011-06-10 13:00 | 2011-06-10 17:00 | 0.5d | 35d |  | 潘海洋 | 32h |  | 源代码、readme、单元测试报告 | 编码与单元测试 |
| 118 | 7.2.1.5.1 | 左侧目录菜单 | 2d | 2017-03-10 08:00 | 2017-03-11 17:00 |  |  |  |  | 35d | start no earlier than 2017-03-10 08:00 | 陈江 | 16h |  |  |  |
| 119 | 7.2.1.6 | **报表主题设计** | 5d | 2017-03-02 08:00 | 2017-03-08 17:00 |  | 2011-06-11 08:00 | 2011-06-11 12:00 | 0.5d | 38d |  | 潘海洋 | 100h |  | 源代码、readme、单元测试报告 | 编码与单元测试 |
| 120 | 7.2.1.6.1 | 主题表单界面 | 1.5d | 2017-03-02 08:00 | 2017-03-03 12:00 |  |  |  |  | 41.5d | start no earlier than 2017-03-02 08:00 | 潘海洋 | 12h |  |  |  |
| 121 | 7.2.1.6.2 | 主题内容编辑 | 3d | 2017-03-06 08:00 | 2017-03-08 17:00 |  |  |  |  | 38d | start no earlier than 2017-03-06 08:00 | 潘海洋; 何平 | 48h |  |  |  |
| 122 | 7.2.1.7 | 订阅管理 | 2d | 2017-02-27 08:00 A | 2017-02-28 17:00 A | 100% | 2011-06-11 13:00 | 2011-06-13 12:00 | 1d |  |  | 陈江 | 16h | 16h | 源代码、readme、单元测试报告 | 编码与单元测试 |
| 123 | 7.2.1.8 | 度量和维度管理 | 1d | 2017-03-01 08:00 | 2017-03-01 17:00 |  |  |  |  | 43d | start no earlier than 2017-03-01 08:00 | 陈江 | 8h |  | 源代码、readme、单元测试报告 | 编码与单元测试 |
| 124 | 7.2.1.9 | 权限管理 | 2d | 2017-03-02 08:00 A | 2017-03-03 17:00 A | 100% | 2011-06-13 13:00 | 2011-06-13 17:00 | 0.5d |  | finish no earlier than 2017-03-03 17:00 | 陈江 | 8h | 8h | 源代码、readme、单元测试报告 | 编码与单元测试 |
| 125 | 7.3 | 需求跟踪 | 1d | 2017-04-01 08:00 | 2017-04-01 17:00 |  |  |  |  | 19d | finish no earlier than 2017-04-01 17:00 |  |  |  | 问题记录与跟踪表 | 项目管理 |
| 126 | 7.4 | **代码评审、代码审核** | 1d | 2017-04-03 08:00 A | 2017-04-03 17:00 A | 100% |  |  |  |  |  |  |  |  |  |  |
| 127 | 7.4.1 | 大数据可视化子系统 | 1d | 2017-04-03 08:00 A | 2017-04-03 17:00 A | 100% |  |  |  |  | finish no earlier than 2017-04-03 17:00 |  |  |  | 问题记录与跟踪表 | 评审 |
| 128 | 8 | 集成环境验证与持续集成（启动于编码阶段） | 1d | 2017-04-01 08:00 A | 2017-04-01 17:00 A | 100% |  |  |  |  | finish no earlier than 2017-04-01 17:00 |  |  |  | 集成人员、集成环境、集成打包记录 | 编码与单元测试 |
| 129 | 9 | 界面验收 | 3d | 2017-04-11 08:00 | 2017-04-13 17:00 |  |  |  |  | 10d | finish no earlier than 2017-04-13 17:00 |  |  |  | 界面效果图、设计源文件（PSD、PNG等）、界面原型、问题记录与跟踪表 | 产品化 |
| 130 | 10 | **系统测试** | 17d | 2017-04-03 08:00 | 2017-04-24 17:00 |  |  |  |  | 2d |  |  |  |  |  |  |
| 131 | 10.1 | **第1轮系统测试** | 9d | 2017-04-03 08:00 | 2017-04-13 17:00 |  |  |  |  | 10d |  |  |  |  |  |  |
| 132 | 10.1.1 | 执行系统测试 | 5d | 2017-04-03 08:00 | 2017-04-08 17:00 |  |  |  |  | 14d | finish no earlier than 2017-04-08 17:00 |  |  |  | 问题记录与跟踪表 | 执行系统测试 |
| 133 | 10.1.2 | 测试问题修订 | 3d | 2017-04-10 08:00 | 2017-04-12 17:00 |  |  |  |  | 11d | finish no earlier than 2017-04-12 17:00 |  |  |  | 测试记录 | 返工 |
| 134 | 10.1.3 | 测试问题回测 | 3d | 2017-04-11 08:00 | 2017-04-13 17:00 |  |  |  |  | 10d | finish no earlier than 2017-04-13 17:00 |  |  |  | 测试记录 | 执行系统测试 |
| 135 | 10.2 | **整体性测试** | 5d | 2017-04-17 08:00 | 2017-04-21 17:00 |  |  |  |  | 4d |  |  |  |  |  |  |
| 136 | 10.2.1 | 执行系统测试 | 3d | 2017-04-17 08:00 | 2017-04-19 17:00 |  |  |  |  | 6d | finish no earlier than 2017-04-19 17:00 |  |  |  |  | 执行系统测试 |
| 137 | 10.2.2 | 测试问题修订 | 3d | 2017-04-17 08:00 | 2017-04-19 17:00 |  |  |  |  | 6d | finish no earlier than 2017-04-19 17:00 |  |  |  | 测试记录 | 返工 |
| 138 | 10.2.3 | 测试问题回测 | 2d | 2017-04-20 08:00 | 2017-04-21 17:00 |  |  |  |  | 4d | finish no earlier than 2017-04-21 17:00 |  |  |  | 测试记录 | 执行系统测试 |
| 139 | 10.3 | **测试报告** | 1d | 2017-04-22 08:00 | 2017-04-22 17:00 |  |  |  |  | 3d |  |  |  |  |  |  |
| 140 | 10.3.1 | 制订系统测试报告 | 1d | 2017-04-22 08:00 | 2017-04-22 17:00 |  |  |  |  | 3d | finish no earlier than 2017-04-22 17:00 |  |  |  | 系统测试报告 | 系统测试 |
| 141 | 10.3.2 | 系统测试报告的审核与确认 | 1d | 2017-04-22 08:00 | 2017-04-22 17:00 |  |  |  |  | 3d | start no earlier than 2017-04-22 08:00 |  |  |  | 问题记录与跟踪表 | 项目管理 |
| 142 | 10.4 | 需求跟踪 | 1d | 2017-04-24 08:00 | 2017-04-24 17:00 |  |  |  |  | 2d | start no earlier than 2017-04-24 08:00 |  |  |  | 需求跟踪表 | 项目管理 |

| ID | WBS | Task | Duration | Start | Finish | Total slack | Constraint | Text29 | Text30 |
| --- | --- | --- | --- | --- | --- | --- | --- | --- | --- |
| 143 | 11 | **培训教案** | 3d | 2017-04-24 08:00 | 2017-04-26 17:00 | 0d |  |  |  |
| 144 | 11.1 | 制作培训教案 | 3d | 2017-04-24 08:00 | 2017-04-26 17:00 | 0d | finish no earlier than 2017-04-26 17:00 | 培训手册、培训PPT | 产品化 |
